How a schedule from MS Project changed from version to version. A marks actual dates.

## Version 1 (saved 2018-09-29)

Note of the change: 第二周

| ID | WBS | Task | Duration | Start | Finish | Predecessors | Constraint |
| --- | --- | --- | --- | --- | --- | --- | --- |
| 1 | 1 | **软件工程系列渔乐生活APP需求工程计划** | 82d | 2018-09-19 08:00 | 2019-01-09 17:00 |  |  |
| 2 | 1.1 | **项目准备** | 4d | 2018-09-19 08:00 | 2018-09-24 17:00 |  |  |
| 3 |  | 项目任务书下达 | 0.1d | 2018-09-19 08:00 | 2018-09-19 08:48 |  |  |
| 4 |  | logo设计 | 1d | 2018-09-19 08:48 | 2018-09-20 08:48 | 3 |  |
| 5 |  | 小组会议 | 0.1d | 2018-09-20 08:48 | 2018-09-20 09:36 | 4 |  |
| 6 |  | 软件资源配置 | 1d | 2018-09-20 09:36 | 2018-09-21 09:36 | 5 |  |
| 7 |  | UML学习 | 1.8d | 2018-09-21 09:36 | 2018-09-22 17:00 | 6 |  |
| 8 |  | 与杨枨老师确认项目大致内容 | 1d | 2018-09-24 08:00 | 2018-09-24 17:00 | 7 |  |
| 9 | 1.2 | **项目启动** | 3d | 2018-09-24 08:00 | 2018-09-26 17:00 | 8 |  |
| 10 | 1.2.1 | **可行性分析** | 2d | 2018-09-25 08:00 | 2018-09-26 17:00 | 8 |  |
| 11 |  | 小组会议 | 0.1d | 2018-09-25 08:00 | 2018-09-25 08:48 | 8 |  |
| 12 |  | 可行性分析文档完成 | 1.9d | 2018-09-25 08:48 | 2018-09-26 17:00 | 11 |  |
| 13 | 1.3 | **项目计划** | 37d | 2018-09-26 08:00 | 2018-11-14 17:00 | 12 |  |
| 14 | 1.3.1 | **需求工程阶段-初步** | 4d | 2018-09-26 08:00 | 2018-09-29 17:00 | 12 |  |
| 15 |  | 小组会议 | 0.1d | 2018-09-26 08:00 | 2018-09-26 08:48 | 12 |  |
| 16 |  | 需求工程起草 | 0.3d | 2018-09-26 08:48 | 2018-09-26 11:12 | 15 |  |
| 17 |  | 甘特图 | 1d | 2018-09-27 08:00 | 2018-09-27 17:00 | 16 |  |
| 18 |  | OBS | 0.5d | 2018-09-28 08:00 | 2018-09-28 12:00 | 17 |  |
| 19 |  | WBS | 0.5d | 2018-09-28 13:00 | 2018-09-28 17:00 | 18 |  |
| 20 |  | 项目章程 | 0.2d | 2018-09-29 08:00 | 2018-09-29 09:36 | 19 |  |
| 21 |  | 项目计划起草 | 0.3d | 2018-09-29 08:00 | 2018-09-29 10:24 | 20 |  |
| 22 | 1.3.2 | **需求工程阶段-修订** | 2d | 2018-09-29 08:00 | 2018-09-30 17:00 | 21 |  |
| 23 |  | 需求工程起草文档修订 | 0.5d | 2018-09-30 08:00 | 2018-09-30 12:00 | 21 |  |
| 24 |  | 项目计划修订 | 0.5d | 2018-09-30 08:00 | 2018-09-30 12:00 | 23 |  |
| 25 | 1.3.3 | **需求获取** | 9d | 2018-10-08 08:00 | 2018-10-18 17:00 | 24 |  |
| 26 |  | 定义愿景和范围 | 0.1d | 2018-10-08 08:00 | 2018-10-08 08:48 | 24 |  |
| 27 |  | 确定需求开发过程 | 0.1d | 2018-10-09 08:00 | 2018-10-09 08:48 | 26 |  |
| 28 |  | 用户群分类 | 0.5d | 2018-10-10 08:00 | 2018-10-10 12:00 | 27 |  |
| 29 |  | 小组会议 | 0.2d | 2018-10-10 08:00 | 2018-10-10 09:36 | 28 |  |
| 30 |  | 选择产品代表 | 0.13d | 2018-10-11 08:00 | 2018-10-11 09:02 | 29 |  |
| 31 |  | 建立核心队伍 | 0.2d | 2018-10-11 08:00 | 2018-10-11 09:36 | 30 |  |
| 32 |  | 与杨枨老师进行需求访谈 | 0.2d | 2018-10-12 08:00 | 2018-10-12 09:36 | 31 |  |
| 33 |  | 确定使用实例 | 0.2d | 2018-10-12 09:36 | 2018-10-12 11:12 | 32 |  |
| 34 |  | 小组会议 | 0.1d | 2018-10-12 11:12 | 2018-10-12 12:00 | 33 |  |
| 35 |  | 分析用户工作流程 | 1d | 2018-10-13 08:00 | 2018-10-13 17:00 | 34 |  |
| 36 |  | 确定质量属性 | 0.3d | 2018-10-14 08:00 | 2018-10-14 10:24 | 35 |  |
| 37 |  | 检查问题报告 | 0.5d | 2018-10-15 08:00 | 2018-10-15 12:00 | 36 |  |
| 38 |  | 需求重用 | 0.2d | 2018-10-16 08:00 | 2018-10-16 09:36 | 37 |  |
| 39 |  | 小组会议 | 0.5d | 2018-10-16 08:00 | 2018-10-16 12:00 | 38 |  |
| 40 |  | 与杨枨老师进行需求确认 | 0.2d | 2018-10-17 08:00 | 2018-10-17 09:36 | 39 |  |
| 41 |  | 小组会议 | 0.2d | 2018-10-17 09:36 | 2018-10-17 11:12 | 40 |  |
| 42 |  | 需求整理 | 1d | 2018-10-17 11:12 | 2018-10-18 11:12 | 41 |  |
| 43 | 1.3.4 | **需求分析** | 8d | 2018-10-18 11:12 | 2018-10-29 11:12 | 42 |  |
| 44 |  | 绘制关联图 | 1d | 2018-10-18 11:12 | 2018-10-19 11:12 | 42 |  |
| 45 |  | 创建开发原型 | 1d | 2018-10-19 11:12 | 2018-10-20 11:12 | 44 |  |
| 46 |  | 分析可行性 | 1d | 2018-10-22 08:00 | 2018-10-22 17:00 | 45 |  |
| 47 |  | 确定需求优先级 | 0.1d | 2018-10-23 08:00 | 2018-10-23 08:48 | 46 |  |
| 48 |  | 为需求建立模型 | 1d | 2018-10-23 08:48 | 2018-10-24 08:48 | 47 |  |
| 49 |  | 小组会议 | 0.9d | 2018-10-24 08:48 | 2018-10-24 17:00 | 48 |  |
| 50 |  | 与杨枨老师进行需求访谈 | 1d | 2018-10-25 08:00 | 2018-10-25 17:00 | 49 |  |
| 51 |  | UML学习 | 1d | 2018-10-26 08:00 | 2018-10-26 17:00 | 50 |  |
| 52 |  | 编写数据字典 | 1d | 2018-10-27 08:00 | 2018-10-27 17:00 | 51 | start no earlier than 2018-10-27 08:00 |
| 53 |  | 小组会议 | 0.2d | 2018-10-28 08:00 | 2018-10-28 09:36 | 52 |  |
| 54 |  | UML复习 | 1d | 2018-10-29 08:00 | 2018-10-29 17:00 | 53 |  |
| 55 | 1.3.5 | **需求规格说明** | 12d | 2018-10-30 08:00 | 2018-11-14 17:00 | 54 |  |
| 56 |  | 小组会议 | 0.2d | 2018-10-30 08:00 | 2018-10-30 09:36 | 54 |  |
| 57 |  | 与杨枨老师进行访谈 | 0.3d | 2018-10-30 09:36 | 2018-10-30 12:00 | 56 |  |
| 58 |  | 采用软件需求规格说明模板 | 1d | 2018-10-30 13:00 | 2018-10-31 12:00 | 57 |  |
| 59 |  | 小组会议 | 0.5d | 2018-10-31 13:00 | 2018-10-31 17:00 | 58 |  |
| 60 |  | 指明需求来源 | 2d | 2018-11-01 08:00 | 2018-11-02 17:00 | 59 |  |
| 61 |  | 钓鱼用户访谈 | 1.5d | 2018-11-03 08:00 | 2018-11-04 12:00 | 60 |  |
| 62 |  | 小组会议 | 0.2d | 2018-11-05 08:00 | 2018-11-05 09:36 | 61 |  |
| 63 |  | 为每一项需求注上记号 | 1d | 2018-11-05 09:36 | 2018-11-06 09:36 | 62 |  |
| 64 |  | UML学习 | 1d | 2018-11-06 09:36 | 2018-11-07 09:36 | 63 |  |
| 65 |  | 记录业务规范 | 0.3d | 2018-11-07 09:36 | 2018-11-07 12:00 | 64 |  |
| 66 |  | UML复习 | 1d | 2018-11-07 13:00 | 2018-11-08 12:00 | 65 |  |
| 67 |  | 小组会议 | 0.2d | 2018-11-08 13:00 | 2018-11-08 14:36 | 66 |  |
| 68 |  | 整理成需求规格说明书 | 1d | 2018-11-08 14:36 | 2018-11-09 14:36 | 67 |  |
| 69 |  | 与杨枨老师进行交流 | 0.3d | 2018-11-09 14:36 | 2018-11-09 17:00 | 68 |  |
| 70 |  | 小组会议 | 0.2d | 2018-11-12 08:00 | 2018-11-12 09:36 | 69 |  |

| ID | WBS | Task | Duration | Start | Finish | Predecessors |
| --- | --- | --- | --- | --- | --- | --- |
| 71 |  | 管理员访谈 | 1d | 2018-11-12 09:36 | 2018-11-13 09:36 | 70 |
| 72 |  | 召开应用供需开发联系会议 | 1d | 2018-11-13 09:36 | 2018-11-14 09:36 | 71 |
| 73 | 1.4 | **项目控制** | 21d | 2018-11-15 08:00 | 2018-12-13 17:00 | 72 |
| 74 | 1.4.1 | **需求规格审核** | 8d | 2018-11-15 08:00 | 2018-11-26 17:00 | 72 |
| 75 |  | 审查需求文档 | 0.3d | 2018-11-15 08:00 | 2018-11-15 10:24 | 72 |
| 76 |  | 小组会议 | 0.2d | 2018-11-16 08:00 | 2018-11-16 09:36 | 75 |
| 77 |  | 编写需求文档 | 1d | 2018-11-19 08:00 | 2018-11-19 17:00 | 76 |
| 78 |  | 编写用户手册 | 1d | 2018-11-20 08:00 | 2018-11-20 17:00 | 77 |
| 79 |  | 确定合格的标准 | 0.3d | 2018-11-21 08:00 | 2018-11-21 10:24 | 78 |
| 80 |  | 管理员访谈 | 0.2d | 2018-11-22 08:00 | 2018-11-22 09:36 | 79 |
| 81 |  | 小组会议 | 0.2d | 2018-11-23 08:00 | 2018-11-23 09:36 | 80 |
| 82 |  | 与杨枨老师进行交流 | 0.3d | 2018-11-23 09:36 | 2018-11-23 12:00 | 81 |
| 83 | 1.4.2 | **需求管理** | 14d | 2018-11-26 08:00 | 2018-12-13 17:00 | 82 |
| 84 |  | 小组会议 | 0.2d | 2018-11-26 08:00 | 2018-11-26 09:36 | 82 |
| 85 |  | 确定变更控制过程 | 0.3d | 2018-11-27 08:00 | 2018-11-27 10:24 | 84 |
| 86 |  | 建立变更控制委员会 | 0.2d | 2018-11-28 08:00 | 2018-11-28 09:36 | 85 |
| 87 |  | 进行变更影响分析 | 0.2d | 2018-11-29 08:00 | 2018-11-29 09:36 | 86 |
| 88 |  | 跟踪每一项变更 | 0.25d | 2018-11-30 08:00 | 2018-11-30 10:00 | 87 |
| 89 |  | 编写需求文档的基准版本和控制版本 | 0.2d | 2018-12-03 08:00 | 2018-12-03 09:36 | 88 |
| 90 |  | 维护变更历史纪录 | 1d | 2018-12-04 08:00 | 2018-12-04 17:00 | 89 |
| 91 |  | 小组会议 | 0.2d | 2018-12-05 08:00 | 2018-12-05 09:36 | 90 |
| 92 |  | 跟踪需求状态 | 1d | 2018-12-06 08:00 | 2018-12-06 17:00 | 91 |
| 93 |  | 衡量需求稳定性 | 1d | 2018-12-07 08:00 | 2018-12-07 17:00 | 92 |
| 94 |  | 使用需求管理工具 | 1d | 2018-12-10 08:00 | 2018-12-10 17:00 | 93 |
| 95 | 1.5 | **项目收尾** | 12d | 2018-12-25 08:00 | 2019-01-09 17:00 | 94 |
| 96 |  | 文档整理 | 1d | 2018-12-25 08:00 | 2018-12-25 17:00 | 94 |
| 97 |  | 制作PPT | 1d | 2018-12-26 08:00 | 2018-12-26 17:00 | 96 |
| 98 |  | 小组会议 | 0.2d | 2018-12-27 08:00 | 2018-12-27 09:36 | 97 |
| 99 |  | 答辩 | 1d | 2019-01-09 08:00 | 2019-01-09 17:00 | 98 |

## Version 2 (saved 2018-10-14)

Note of the change: 第三周

Last finish stays 2019-01-09. Complete tasks 0 → 24.

Added:

| ID | Task | Duration | Start | Finish | Predecessors | Constraint | Resources |
| --- | --- | --- | --- | --- | --- | --- | --- |
| 14 | **第一次迭代** | 33d | 2018-09-29 A | 2018-11-08 | 12 |  |  |
| 53 | 需求建模 | 1d | 2018-10-24 | 2018-10-24 | 50 |  | 郑丞钧 |
| 54 | UML学习 | 1d | 2018-10-25 | 2018-10-25 | 51 |  | 罗培城; 苏碧青; 张嘉诚; 赵豪杰; 郑丞钧 |
| 60 | 为每个需求分配唯一标识 | 0.2d | 2018-10-29 | 2018-10-29 | 59 |  | 张嘉诚 |
| 67 | **验证** | 4d | 2018-11-05 | 2018-11-08 | 55 |  |  |
| 70 | 原型修改 | 1d | 2018-11-07 | 2018-11-07 | 69 |  | 赵豪杰 |
| 72 | **第二次迭代** | 7d | 2018-11-09 | 2018-11-16 | 14 |  |  |
| 73 | **需求分析** | 3d | 2018-11-09 | 2018-11-12 | 71 |  |  |
| 75 | 得出功能需求 | 1d | 2018-11-09 | 2018-11-09 | 71 |  | 苏碧青 |
| 76 | 修改数据字典 | 1d | 2018-11-10 | 2018-11-10 | 74, 75 |  | 张嘉诚 |
| 77 | 需求建模 | 1d | 2018-11-12 | 2018-11-12 | 76 |  | 郑丞钧 |
| 78 | **原型开发** | 4d | 2018-11-13 | 2018-11-16 | 73 |  |  |
| 79 | 界面布局设计 | 1d | 2018-11-13 | 2018-11-13 | 77 |  | 罗培城 |
| 80 | 原件样式设计 | 1d | 2018-11-13 | 2018-11-13 | 77 |  | 苏碧青 |
| 81 | 总体构建 | 1d | 2018-11-14 | 2018-11-14 | 79, 80 |  | 赵豪杰 |
| 92 | 与杨枨老师进行交流 | 1d | 2018-12-07 | 2018-12-07 | 91 |  | 罗培城; 苏碧青; 张嘉诚; 赵豪杰; 郑丞钧 |
| 105 | **编码/测试计划** | 12d | 2018-12-21 | 2019-01-05 | 93 |  |  |
| 106 | Android端编码 | 6d | 2018-12-21 | 2018-12-28 | 104 |  | 苏碧青; 张嘉诚; 罗培城 |
| 107 | 服务器端编码 | 6d | 2018-12-21 | 2018-12-28 | 104 |  | 赵豪杰; 郑丞钧 |
| 108 | 联合调试 | 6d | 2018-12-31 | 2019-01-05 | 106, 107 | finish no earlier than 2019-01-05 | 罗培城; 苏碧青; 张嘉诚; 赵豪杰; 郑丞钧 |

Removed: 48 为需求建立模型; 54 UML复习; 63 为每一项需求注上记号; 66 UML复习; 91 小组会议; 98 小组会议

Changed:

| ID | Task | Start | Finish | Duration | Complete | Total float | Predecessors | Other |
| --- | --- | --- | --- | --- | --- | --- | --- | --- |
| 1 | **软件工程系列渔乐生活APP需求工程计划** | 2018-09-19 08:00 → 2018-09-19 A | 2019-01-09 17:00 → 2019-01-09 | 82d → 88d | 0% → 20% |  |  |  |
| 2 | **项目准备** | 2018-09-19 08:00 → 2018-09-19 A | 2018-09-24 17:00 → 2018-09-26 A (+2d) | 4d → 6d | 0% → 100% |  |  |  |
| 3 | 项目任务书下达 | 2018-09-19 08:00 → 2018-09-19 A | 2018-09-19 08:48 → 2018-09-19 A | 0.1d → 1d | 0% → 100% |  |  |  |
| 4 | 小组会议 | 2018-09-26 08:00 → 2018-09-20 A (-6d) | 2018-09-26 08:48 → 2018-09-20 A (-6d) | 0.1d → 1d | 0% → 100% |  | 12 → 3 | resources 罗培城; 苏碧青; 张嘉诚; 赵豪杰; 郑丞钧 → 赵豪杰; 张嘉诚; 罗培城; 苏碧青; 郑丞钧 |
| 5 | logo设计 | 2018-09-19 08:48 → 2018-09-21 A (+2d) | 2018-09-20 08:48 → 2018-09-21 A (+1d) |  | 0% → 100% |  | 3 → 4 |  |
| 6 | 软件资源配置 | 2018-09-20 09:36 → 2018-09-21 A (+1d) | 2018-09-21 09:36 → 2018-09-21 A |  | 0% → 100% |  | 48 → 4 |  |
| 7 | UML学习 | 2018-09-21 09:36 → 2018-09-24 A (+3d) | 2018-09-22 17:00 → 2018-09-24 A (+2d) | 1.8d → 1d | 0% → 100% |  | 6 → 4 | constraint none → start no earlier than 2018-09-24 |
| 8 | 与杨枨老师确认项目大致内容 | 2018-09-24 08:00 → 2018-09-26 A (+2d) | 2018-09-24 17:00 → 2018-09-26 A (+2d) |  | 0% → 100% |  |  | constraint none → start no earlier than 2018-09-26 |
| 9 | **项目启动** | 2018-09-24 08:00 → 2018-09-27 A (+3d) | 2018-09-26 17:00 → 2018-09-28 A (+2d) | 3d → 2d | 0% → 100% |  | 8 → 2 |  |
| 10 | 小组会议 | 2018-09-25 08:00 → 2018-09-27 A (+2d) | 2018-09-25 08:48 → 2018-09-27 A (+2d) | 0.1d → 1d | 0% → 100% |  |  |  |
| 11 | **可行性分析** | 2018-09-25 08:00 → 2018-09-28 A (+3d) | 2018-09-26 17:00 → 2018-09-28 A (+2d) | 2d → 1d | 0% → 100% |  | 8 → 10 |  |
| 12 | 可行性分析文档完成 | 2018-09-25 08:48 → 2018-09-28 A (+3d) | 2018-09-26 17:00 → 2018-09-28 A (+2d) | 1.9d → 1d | 0% → 100% |  |  |  |
| 13 | **项目计划** | 2018-09-26 08:00 → 2018-09-28 (+2d) | 2018-11-14 17:00 → 2018-11-30 (+16d) | 37d → 51d | 0% → 23% |  | 12 → 9 |  |
| 15 | **需求工程阶段-初步** | 2018-09-26 08:00 → 2018-09-29 A (+3d) | 2018-09-29 17:00 → 2018-09-29 A | 4d → 1d | 0% → 100% |  |  |  |
| 16 | 需求工程起草 | 2018-09-26 08:48 → 2018-09-29 A (+3d) | 2018-09-26 11:12 → 2018-09-29 A (+3d) | 0.3d → 1d | 0% → 100% |  | 4 → 12 |  |
| 17 | 甘特图 | 2018-09-27 08:00 → 2018-09-29 A (+2d) | 2018-09-27 17:00 → 2018-09-29 A (+2d) |  | 0% → 100% |  | 16 → 12 |  |
| 18 | OBS | 2018-09-28 08:00 → 2018-09-29 A (+1d) | 2018-09-28 12:00 → 2018-09-29 A (+1d) |  | 0% → 100% |  | 17 → 12 |  |
| 19 | WBS | 2018-09-28 13:00 → 2018-09-29 A (+1d) | 2018-09-28 17:00 → 2018-09-29 A (+1d) |  | 0% → 100% |  |  |  |
| 20 | 项目章程 | 2018-09-29 08:00 → 2018-09-29 A | 2018-09-29 09:36 → 2018-09-29 A | 0.2d → 1d | 0% → 100% |  | 19 → 12 |  |
| 21 | 项目计划起草 | 2018-09-29 08:00 → 2018-09-29 A | 2018-09-29 10:24 → 2018-09-29 A | 0.3d → 1d | 0% → 100% |  | 20 → 12 |  |
| 22 | **需求工程阶段-修订** | 2018-09-29 08:00 → 2018-09-30 A (+1d) | 2018-09-30 17:00 → 2018-09-30 A | 2d → 1d | 0% → 100% |  | 21 → 15 |  |
| 23 | 需求工程起草文档修订 | 2018-09-30 08:00 → 2018-09-30 A | 2018-09-30 12:00 → 2018-09-30 A |  | 0% → 100% |  |  |  |
| 24 | 项目计划修订 | 2018-09-30 08:00 → 2018-09-30 A | 2018-09-30 12:00 → 2018-09-30 A |  | 0% → 100% |  | 23 → 21 |  |
| 25 | **需求获取** | 2018-10-08 08:00 → 2018-10-08 A | 2018-10-18 17:00 → 2018-10-16 (-2d) | 9d → 8d | 0% → 47% |  | 24 → 22 |  |
| 26 | 定义愿景和范围 | 2018-10-08 08:00 → 2018-10-08 A | 2018-10-08 08:48 → 2018-10-08 A | 0.1d → 0.5d | 0% → 100% |  |  |  |
| 27 | 确定需求开发过程 | 2018-10-09 08:00 → 2018-10-08 A (-1d) | 2018-10-09 08:48 → 2018-10-08 A (-1d) | 0.1d → 0.5d | 0% → 100% |  | 26 → 24 |  |
| 28 | 用户群分类 | 2018-10-10 08:00 → 2018-10-08 A (-2d) | 2018-10-10 12:00 → 2018-10-08 A (-2d) | 0.5d → 1d | 0% → 100% |  | 27 → 24 |  |
| 29 | UML学习 | 2018-10-26 08:00 → 2018-10-09 A (-17d) | 2018-10-26 17:00 → 2018-10-09 A (-17d) |  | 0% → 100% |  | 50 → 24 |  |
| 30 | 小组会议 | 2018-10-10 08:00 → 2018-10-10 A | 2018-10-10 09:36 → 2018-10-10 A | 0.2d → 1d | 0% → 100% |  |  | resources 罗培城; 苏碧青; 张嘉诚; 赵豪杰; 郑丞钧 → 苏碧青; 张嘉诚; 赵豪杰; 郑丞钧; 罗培城 |
| 31 | 选择产品代表 | 2018-10-11 08:00 → 2018-10-11 A | 2018-10-11 09:02 → 2018-10-11 A | 0.13d → 0.1d | 0% → 100% |  |  |  |
| 32 | 建立核心队伍 | 2018-10-11 08:00 → 2018-10-11 A | 2018-10-11 09:36 → 2018-10-11 A | 0.2d → 0.1d | 0% → 100% |  | 31 → 30 |  |
| 33 | 与杨枨老师进行需求访谈 | 2018-10-12 08:00 → 2018-10-11 A (-1d) | 2018-10-12 09:36 → 2018-10-11 A (-1d) | 0.2d → 0.1d | 0% → 100% |  |  |  |
| 34 | 小组会议 | 2018-10-12 11:12 → 2018-10-11 (-1d) | 2018-10-12 12:00 → 2018-10-11 (-1d) |  |  |  | 35 → 33 |  |
| 35 | 确定使用实例 | 2018-10-12 09:36 → 2018-10-11 (-1d) | 2018-10-12 11:12 → 2018-10-12 | 0.2d → 1d |  |  | 33 → 34 |  |
| 36 | 分析用户工作流程 | 2018-10-13 08:00 → 2018-10-12 (-1d) | 2018-10-13 17:00 → 2018-10-12 (-1d) | 1d → 0.5d |  |  |  |  |
| 37 | 确定质量属性 | 2018-10-14 08:00 → 2018-10-12 (-2d) | 2018-10-14 10:24 → 2018-10-12 (-2d) | 0.3d → 0.5d |  |  | 36 → 34 |  |
| 38 | 检查问题报告 | 2018-10-15 08:00 → 2018-10-13 (-2d) | 2018-10-15 12:00 → 2018-10-13 (-2d) | 0.5d → 1d |  |  |  | resources 罗培城; 郑丞钧 → 罗培城 |
| 39 | 需求重用 | 2018-10-16 08:00 → 2018-10-15 (-1d) | 2018-10-16 09:36 → 2018-10-15 (-1d) | 0.2d → 1d |  |  |  | resources 张嘉诚 → 苏碧青 |
| 40 | 与杨枨老师进行需求确认 | 2018-10-17 08:00 → 2018-10-16 (-1d) | 2018-10-17 09:36 → 2018-10-16 (-1d) | 0.2d → 0.1d |  |  | 41 → 39 | resources 罗培城; 苏碧青; 张嘉诚; 赵豪杰; 郑丞钧 → 赵豪杰; 罗培城; 苏碧青; 张嘉诚; 郑丞钧 |
| 41 | 小组会议 | 2018-10-16 08:00 → 2018-10-16 | 2018-10-16 12:00 → 2018-10-16 | 0.5d → 0.1d |  |  | 39 → 40 |  |
| 42 | 需求整理 | 2018-10-17 11:12 → 2018-10-16 (-1d) | 2018-10-18 11:12 → 2018-10-16 (-2d) | 1d → 0.5d |  |  | 51 → 41 | resources 罗培城; 苏碧青; 张嘉诚; 赵豪杰; 郑丞钧 → none |
| 43 | **需求分析** | 2018-10-18 11:12 → 2018-10-17 (-1d) | 2018-10-29 11:12 → 2018-10-25 (-4d) | 8d → 7d |  |  | 42 → 25 |  |
| 44 | 绘制关联图 | 2018-10-18 11:12 → 2018-10-16 (-2d) | 2018-10-19 11:12 → 2018-10-17 (-2d) |  |  |  |  |  |
| 45 | 创建开发原型 | 2018-10-19 11:12 → 2018-10-16 (-3d) | 2018-10-20 11:12 → 2018-10-17 (-3d) |  |  |  | 44 → 42 |  |
| 46 | 分析可行性 | 2018-10-22 08:00 → 2018-10-16 (-6d) | 2018-10-22 17:00 → 2018-10-17 (-5d) |  |  |  | 45 → 42 |  |
| 47 | 确定需求优先级 | 2018-10-23 08:00 → 2018-10-16 (-7d) | 2018-10-23 08:48 → 2018-10-17 (-6d) | 0.1d → 1d |  |  | 46 → 42 |  |
| 48 | 小组会议 | 2018-09-20 08:48 → 2018-10-17 (+27d) | 2018-09-20 09:36 → 2018-10-17 (+27d) |  |  |  | 5 → 47 | resources 赵豪杰; 张嘉诚; 罗培城; 苏碧青; 郑丞钧 → 罗培城; 苏碧青; 张嘉诚; 赵豪杰; 郑丞钧 |
| 49 | UML学习 | 2018-10-30 09:36 → 2018-10-18 (-12d) | 2018-10-30 12:00 → 2018-10-18 (-12d) | 0.3d → 1d |  |  | 66 → 48 | was named 与杨枨老师进行访谈 |
| 50 | 与杨枨老师进行需求访谈 | 2018-10-25 08:00 → 2018-10-23 (-2d) | 2018-10-25 17:00 → 2018-10-23 (-2d) | 1d → 0.2d |  | none → 1.6d | 59 → 48 | constraint none → start no earlier than 2018-10-23 |
| 51 | 小组会议 | 2018-10-17 09:36 → 2018-10-23 (+6d) | 2018-10-17 11:12 → 2018-10-23 (+6d) |  |  |  | 40 → 50 |  |
| 52 | 编写数据字典 | 2018-10-27 08:00 → 2018-10-24 (-3d) | 2018-10-27 17:00 → 2018-10-24 (-3d) |  |  |  | 29 → 50 | constraint start no earlier than 2018-10-27 08:00 → none |
| 55 | **需求规格说明** | 2018-10-30 08:00 → 2018-10-26 (-4d) | 2018-11-14 17:00 → 2018-11-08 (-6d) |  |  |  | UML复习 → 43 |  |
| 56 | 采用软件需求规格说明模板 | 2018-10-30 13:00 → 2018-10-26 (-4d) | 2018-10-31 12:00 → 2018-10-26 (-5d) |  |  |  | 49 → 54 |  |
| 57 | 指明需求来源 | 2018-11-01 08:00 → 2018-10-27 (-5d) | 2018-11-02 17:00 → 2018-10-27 (-6d) | 2d → 1d |  |  | 71 → 56 |  |
| 58 | 钓鱼用户访谈 | 2018-11-03 08:00 → 2018-10-28 (-6d) | 2018-11-04 12:00 → 2018-10-28 (-7d) | 1.5d → 0.9d |  |  |  |  |
| 59 | 小组会议 | 2018-10-24 08:48 → 2018-10-28 (+4d) | 2018-10-24 17:00 → 2018-10-28 (+4d) | 0.9d → 0.1d |  |  | 为需求建立模型 → 58 | resources 赵豪杰 → 罗培城; 苏碧青; 张嘉诚; 赵豪杰; 郑丞钧 |
| 61 | UML学习 | 2018-11-06 09:36 → 2018-10-29 (-8d) | 2018-11-07 09:36 → 2018-10-29 (-9d) | 1d → 0.8d |  |  | 为每一项需求注上记号 → 59 |  |
| 62 | 记录业务规范 | 2018-11-07 09:36 → 2018-10-30 (-8d) | 2018-11-07 12:00 → 2018-10-30 (-8d) | 0.3d → 1d |  |  | 61 → 59 |  |
| 63 | 小组会议 | 2018-10-28 08:00 → 2018-10-31 (+3d) | 2018-10-28 09:36 → 2018-10-31 (+3d) | 0.2d → 1d |  |  | 52 → 62 |  |
| 64 | 整理成需求规格说明书 | 2018-11-08 14:36 → 2018-11-01 (-7d) | 2018-11-09 14:36 → 2018-11-01 (-8d) |  |  |  | 87 → 63 |  |
| 65 | 与杨枨老师进行交流 | 2018-11-09 14:36 → 2018-11-02 (-7d) | 2018-11-09 17:00 → 2018-11-02 (-7d) | 0.3d → 0.2d |  |  |  | resources 罗培城; 苏碧青; 张嘉诚; 赵豪杰; 郑丞钧 → 罗培城; 苏碧青; 张嘉诚; 郑丞钧; 赵豪杰 |
| 66 | 小组会议 | 2018-10-30 08:00 → 2018-11-02 (+3d) | 2018-10-30 09:36 → 2018-11-02 (+3d) | 0.2d → 0.1d |  |  | UML复习 → 65 |  |
| 68 | 评审需求 | 2018-11-12 09:36 → 2018-11-05 (-7d) | 2018-11-13 09:36 → 2018-11-05 (-8d) |  |  |  | 91 → 66 | was named 管理员访谈 |
| 69 | 测试需求 | 2018-11-13 09:36 → 2018-11-06 (-7d) | 2018-11-14 09:36 → 2018-11-06 (-8d) |  |  |  |  | was named 召开应用供需开发联系会议; resources 罗培城; 苏碧青; 张嘉诚; 赵豪杰; 郑丞钧 → 罗培城; 苏碧青 |
| 71 | 小组会议 | 2018-10-31 13:00 → 2018-11-08 (+8d) | 2018-10-31 17:00 → 2018-11-08 (+8d) | 0.5d → 1d |  |  | 56 → 70 |  |
| 74 | 细化用户需求 | 2018-11-22 08:00 → 2018-11-09 (-13d) | 2018-11-22 09:36 → 2018-11-09 (-13d) | 0.2d → 1d |  |  | 90 → 71 | was named 管理员访谈; resources 罗培城; 苏碧青; 张嘉诚; 赵豪杰; 郑丞钧 → 罗培城 |
| 82 | 小组会议 | 2018-11-05 08:00 → 2018-11-15 (+10d) | 2018-11-05 09:36 → 2018-11-15 (+10d) | 0.2d → 1d |  |  | 58 → 81 |  |
| 83 | 与杨枨老师进行交流 | 2018-11-23 09:36 → 2018-11-16 (-7d) | 2018-11-23 12:00 → 2018-11-16 (-7d) | 0.3d → 1d |  |  | 101 → 82 |  |
| 84 | **项目控制** | 2018-11-15 08:00 → 2018-12-03 (+18d) | 2018-12-13 17:00 → 2018-12-31 (+18d) | 21d → 22d |  |  | 69 → 13 |  |
| 85 | **需求规格审核** | 2018-11-15 08:00 → 2018-12-03 (+18d) | 2018-11-26 17:00 → 2018-12-07 (+11d) | 8d → 5d |  |  | 69 → 83 |  |

| ID | Task | Start | Finish | Duration | Predecessors |
| --- | --- | --- | --- | --- | --- |
| 86 | 审查需求文档 | 2018-11-15 08:00 → 2018-12-03 (+18d) | 2018-11-15 10:24 → 2018-12-03 (+18d) | 0.3d → 1d | 69 → 83 |
| 87 | 小组会议 | 2018-11-08 13:00 → 2018-12-04 (+26d) | 2018-11-08 14:36 → 2018-12-04 (+26d) | 0.2d → 1d | UML复习 → 86 |
| 88 | 编写需求文档 | 2018-11-19 08:00 → 2018-12-05 (+16d) | 2018-11-19 17:00 → 2018-12-05 (+16d) |  | 94 → 87 |
| 89 | 编写用户手册 | 2018-11-20 08:00 → 2018-12-05 (+15d) | 2018-11-20 17:00 → 2018-12-05 (+15d) |  | 88 → 87 |
| 90 | 确定合格的标准 | 2018-11-21 08:00 → 2018-12-05 (+14d) | 2018-11-21 10:24 → 2018-12-05 (+14d) | 0.3d → 1d | 89 → 87 |
| 91 | 小组会议 | 2018-11-12 08:00 → 2018-12-06 (+24d) | 2018-11-12 09:36 → 2018-12-06 (+24d) | 0.2d → 1d | 65 → 88, 89, 90 |
| 93 | **需求管理** | 2018-11-26 08:00 → 2018-12-10 (+14d) | 2018-12-13 17:00 → 2018-12-20 (+7d) | 14d → 10d | 83 → 85 |
| 94 | 小组会议 | 2018-11-16 08:00 → 2018-12-10 (+24d) | 2018-11-16 09:36 → 2018-12-10 (+24d) | 0.2d → 1d | 86 → 92 |
| 95 | 确定变更控制过程 | 2018-11-27 08:00 → 2018-12-11 (+14d) | 2018-11-27 10:24 → 2018-12-11 (+14d) | 0.3d → 1d | 113 → 94 |
| 96 | 建立变更控制委员会 | 2018-11-28 08:00 → 2018-12-12 (+14d) | 2018-11-28 09:36 → 2018-12-12 (+14d) | 0.2d → 1d | 95 → 94 |
| 97 | 进行变更影响分析 | 2018-11-29 08:00 → 2018-12-13 (+14d) | 2018-11-29 09:36 → 2018-12-13 (+14d) | 0.2d → 1d |  |
| 98 | 跟踪每一项变更 | 2018-11-30 08:00 → 2018-12-14 (+14d) | 2018-11-30 10:00 → 2018-12-14 (+14d) | 0.25d → 1d |  |
| 99 | 编写需求文档的基准版本和控制版本 | 2018-12-03 08:00 → 2018-12-15 (+12d) | 2018-12-03 09:36 → 2018-12-15 (+12d) | 0.2d → 1d |  |
| 100 | 维护变更历史纪录 | 2018-12-04 08:00 → 2018-12-17 (+13d) | 2018-12-04 17:00 → 2018-12-17 (+13d) |  |  |
| 101 | 小组会议 | 2018-11-23 08:00 → 2018-12-18 (+25d) | 2018-11-23 09:36 → 2018-12-18 (+25d) | 0.2d → 1d | 74 → 99 |
| 102 | 跟踪需求状态 | 2018-12-06 08:00 → 2018-12-19 (+13d) | 2018-12-06 17:00 → 2018-12-19 (+13d) |  | 小组会议 → 101 |
| 103 | 衡量需求稳定性 | 2018-12-07 08:00 → 2018-12-19 (+12d) | 2018-12-07 17:00 → 2018-12-19 (+12d) |  | 102 → 101 |
| 104 | 使用需求管理工具 | 2018-12-10 08:00 → 2018-12-20 (+10d) | 2018-12-10 17:00 → 2018-12-20 (+10d) |  |  |
| 110 | **项目收尾** | 2018-12-25 08:00 → 2019-01-06 (+12d) | 2019-01-09 17:00 → 2019-01-09 | 12d → 4d | 104 → 84 |
| 111 | 文档整理 | 2018-12-25 08:00 → 2019-01-06 (+12d) | 2018-12-25 17:00 → 2019-01-06 (+12d) |  | 104 → 93 |
| 112 | 制作PPT | 2018-12-26 08:00 → 2019-01-07 (+12d) | 2018-12-26 17:00 → 2019-01-07 (+12d) |  | 111 → 95 |
| 113 | 小组会议 | 2018-11-26 08:00 → 2019-01-08 (+43d) | 2018-11-26 09:36 → 2019-01-08 (+43d) |  | 83 → 96 |
| 114 | 答辩 | 2019-01-09 08:00 → 2019-01-09 | 2019-01-09 17:00 → 2019-01-09 |  | 小组会议 → 97 |

## Version 3 (saved 2018-10-30)

Note of the change: PRD2018-G06-GANTT_v1.1.8_1030

Last finish stays 2019-01-09. Complete tasks 24 → 53.

Added:

| ID | Task | Duration | Start | Finish | Predecessors | Constraint | Resources |
| --- | --- | --- | --- | --- | --- | --- | --- |
| 8 | 需求工程项目计划起草 | 0.38d | 2018-09-28 09:00 A | 2018-09-28 12:00 A | 6 |  | 张嘉诚 |
| 12 | 项目章程起草 | 0.38d | 2018-09-29 09:00 A | 2018-09-29 12:00 A | 90 |  | 赵豪杰 |
| 13 | 需求工程项目计划ppt制作 | 1.25d | 2018-09-29 09:00 A | 2018-09-30 17:00 A | 8 | finish no earlier than 2018-09-30 18:00 | 张嘉诚 |
| 14 | 可行性分析文档修改 | 0.25d | 2018-10-14 09:00 A | 2018-10-14 15:00 A | 92 | finish no earlier than 2018-10-14 18:00 | 罗培铖 |
| 15 | 需求工程项目计划修订及ppt修改 | 1d | 2018-10-14 09:00 A | 2018-10-14 17:00 A | 92 |  | 苏碧青 |
| 16 | 甘特图修订 | 1.25d | 2018-10-14 09:00 A | 2018-10-14 19:00 A | 92 |  | 郑丞钧 |
| 19 | 甘特图修订 | 0.93d | 2018-10-20 09:00 A | 2018-10-20 16:24 A | 94 |  | 郑丞钧 |
| 21 | 需求工程项目计划修订 | 1d | 2018-10-21 09:00 A | 2018-10-21 17:00 A | 94 |  | 苏碧青 |
| 22 | 软件开发计划修订 | 0.38d | 2018-10-21 09:00 A | 2018-10-21 13:00 A | 17 |  | 苏碧青 |
| 23 | 软件开发计划修订 | 0.5d | 2018-10-21 13:00 A | 2018-10-21 17:00 A | 22 |  | 郑丞钧 |
| 25 | **第一轮迭代** | 27.62d | 2018-10-21 09:00 A | 2018-11-21 18:00 | 7 |  |  |
| 28 | 需求工程项目计划修订 | 0.25d | 2018-10-26 09:00 A | 2018-10-26 11:00 A | 95 |  | 罗培铖 |
| 29 | 需求工程项目计划修订 | 0.29d | 2018-10-26 15:20 A | 2018-10-27 12:40 A | 28 |  | 苏碧青 |
| 30 | 需求工程项目计划修订 | 0.67d | 2018-10-27 09:00 A | 2018-10-27 14:20 A | 95 |  | 郑丞钧 |
| 32 | 可行性分析修订 | 1d | 2018-10-28 09:00 A | 2018-10-28 17:00 A | 95 |  | 罗培铖 |
| 33 | 甘特图修订 | 0.98d | 2018-10-28 09:00 A | 2018-10-28 20:52 A | 95 | finish no earlier than 2018-10-28 18:00 | 郑丞钧 |
| 34 | 可行性分析修订 | 1d | 2018-10-28 09:00 A | 2018-10-28 17:00 A | 95 |  | 罗培铖 |
| 35 | 需求工程项目计划修订 | 0.38d | 2018-10-28 09:00 A | 2018-10-28 15:00 A | 30 |  | 苏碧青 |
| 36 | 需求工程答辩ppt修改 | 0.25d | 2018-10-28 18:00 A | 2018-10-28 20:00 A | 96 |  | 张嘉诚 |
| 37 | 需求工程项目计划修订 | 0.25d | 2018-10-28 18:00 A | 2018-10-28 20:00 A | 96 |  | 郑丞钧 |
| 38 | 可行性分析修订 | 1.12d | 2018-10-29 09:00 A | 2018-10-29 18:00 A | 96 | start no earlier than 2018-10-29 09:00 | 罗培铖 |
| 39 | 需求工程项目计划修订 | 1d | 2018-10-30 09:00 A | 2018-10-30 18:00 A | 97 |  | 苏碧青 |
| 40 | 甘特图修订 | 1d | 2018-10-30 09:00 A | 2018-10-30 18:00 A | 97 |  | 郑丞钧 |
| 41 | 软件开发计划修订 | 1d | 2018-10-30 09:00 A | 2018-10-30 18:00 A | 97 |  | 赵豪杰 |
| 48 | 用例图 | 1d | 2018-11-03 12:00 | 2018-11-03 21:00 | 44, 45, 46 |  | 赵豪杰 |
| 49 | 交互图 | 1d | 2018-11-04 09:00 | 2018-11-04 17:00 | 44, 45, 46 |  | 赵豪杰 |
| 50 | **原型构建** | 0.62d | 2018-11-04 18:00 | 2018-11-06 09:00 | 47 |  |  |
| 51 | 界面原型 | 0.62d | 2018-11-04 18:00 | 2018-11-06 09:00 | 47 |  | 苏碧青; 罗培铖 |
| 59 | 需求规格说明书修订 | 0.5d | 2018-11-13 08:24 | 2018-11-13 13:24 | 58 |  | 苏碧青 |
| 64 | 软件需求变更文档 | 0.3d | 2018-11-21 08:00 | 2018-11-21 10:24 | 63 |  | 郑丞钧 |
| 65 | 系统设计与实现计划 | 0.3d | 2018-11-21 08:00 | 2018-11-21 10:24 | 63 |  | 郑丞钧 |
| 72 | 软件概要设计说明 | 0.3d | 2018-11-25 09:00 | 2018-11-25 11:24 | 71 |  | 张嘉诚 |
| 78 | 培训计划 | 0.5d | 2018-12-18 08:00 | 2018-12-18 12:00 | 112 |  | 罗培铖 |
| 81 | 测试计划 | 0.63d | 2018-12-29 12:00 | 2018-12-29 18:01 | 79, 80 | finish no earlier than 2018-12-29 18:00 | 罗培铖 |
| 83 | 安装部署计划 | 0.3d | 2019-01-04 11:00 | 2019-01-04 14:24 | 82 |  | 罗培铖 |
| 84 | 系统维护计划 | 0.12d | 2019-01-05 12:00 | 2019-01-05 13:00 | 83 | start no earlier than 2019-01-05 09:00 | 罗培铖 |
| 86 | 任务分配 | 0.03d | 2018-09-20 08:00 A | 2018-09-20 08:12 A | 3 |  | 罗培铖; 苏碧青; 张嘉诚; 赵豪杰; 郑丞钧 |
| 88 | 第一次小组会议 | 0.03d | 2018-09-27 09:00 A | 2018-09-27 09:12 A | 6 |  | 罗培铖; 苏碧青; 张嘉诚; 赵豪杰; 郑丞钧 |
| 91 | 与杨枨老师进行非正式访谈 | 0.03d | 2018-10-11 09:00 A | 2018-10-11 09:12 A | 12 |  | 罗培铖; 苏碧青; 张嘉诚; 赵豪杰; 郑丞钧 |
| 92 | 第三次小组会议 | 0.03d | 2018-10-11 10:36 A | 2018-10-11 10:48 A | 91 |  | 罗培铖; 苏碧青; 张嘉诚; 赵豪杰; 郑丞钧 |
| 95 | 第五次小组会议 | 0.2d | 2018-10-25 09:00 A | 2018-10-25 10:36 A | 27 | finish no earlier than 2018-10-25 18:00 | 罗培铖; 苏碧青; 张嘉诚; 赵豪杰; 郑丞钧 |
| 96 | 第一次组内评审 | 1d | 2018-10-28 09:00 A | 2018-10-28 17:00 A | 28, 33, 30, 31, 34, 35 |  | 罗培铖; 苏碧青; 张嘉诚; 赵豪杰; 郑丞钧 |
| 97 | 第一次评审 | 0.2d | 2018-10-28 18:00 | 2018-10-28 19:36 | 96 |  | 罗培铖; 苏碧青; 张嘉诚; 赵豪杰; 郑丞钧 |
| 125 | 项目总结 | 1.12d | 2019-01-06 18:00 | 2019-01-08 14:00 | 77 |  | 赵豪杰 |
| 129 | UML概述材料 | 0.75d | 2018-10-13 09:00 A | 2018-10-13 16:00 A |  |  | 赵豪杰 |
| 130 | UML概论及ppt制作 | 1d | 2018-10-14 09:00 A | 2018-10-14 17:00 A | 129 |  | 张嘉诚 |
| 131 | UML评审 | 0.03d | 2018-10-19 09:00 A | 2018-10-19 09:12 A | 130 |  | 罗培铖; 苏碧青; 张嘉诚; 赵豪杰; 郑丞钧 |
| 132 | UML工具:Rational Rose及ppt制作 | 1.15d | 2018-10-21 09:00 A | 2018-10-21 19:12 A | 131 |  | 张嘉诚 |
| 133 | UML评审 | 0.2d | 2018-10-24 09:00 A | 2018-10-24 10:36 A | 132 |  | 罗培铖; 苏碧青; 张嘉诚; 赵豪杰; 郑丞钧 |
| 134 | UML基础1的ppt材料制作 | 1.12d | 2018-10-27 09:00 A | 2018-10-27 19:00 A | 133 |  | 赵豪杰 |
| 135 | UML基础1:ppt | 0.69d | 2018-10-27 18:00 A | 2018-10-28 14:30 A | 134 |  | 张嘉诚 |
| 137 | UML基础2的ppt材料制作 | 0.25d | 2018-11-03 12:00 | 2018-11-03 14:00 | 136 | start no earlier than 2018-11-03 09:00 | 赵豪杰 |

Removed: 2 项目准备; 7 UML学习; 12 可行性分析文档完成; 15 需求工程阶段-初步; 16 需求工程起草; 23 需求工程起草文档修订; 24 项目计划修订; 29 UML学习; 33 与杨枨老师进行需求访谈; 35 确定使用实例; 36 分析用户工作流程; 38 检查问题报告; 39 需求重用; 40 与杨枨老师进行需求确认; 42 需求整理; 50 与杨枨老师进行需求访谈; 54 UML学习; 66 小组会议; 71 小组会议; 77 需求建模; 82 小组会议; 87 小组会议; 91 小组会议; 94 小组会议; 111 文档整理; 113 小组会议

Changed:

| ID | Task | Start | Finish | Duration | Complete | Total float | Predecessors | Other |
| --- | --- | --- | --- | --- | --- | --- | --- | --- |
| 1 | **软件工程系列渔乐生活APP需求工程计划** | 2018-09-19 A → 2018-09-19 09:00 | 2019-01-09 → 2019-01-09 18:00 | 88d → 99d | 20% → 28% |  |  |  |
| 2 | **项目启动** | 2018-09-27 A → 2018-09-19 09:00 (-8d) | 2018-09-28 A → 2018-09-28 18:00 | 2d → 9.12d |  |  | 项目准备 → none |  |
| 3 | 项目任务书下达 | 2018-09-19 A → 2018-09-19 08:00 A | 2018-09-19 A → 2018-09-19 09:00 A | 1d → 0.12d |  |  |  | constraint none → finish no earlier than 2018-09-19 18:00 |
| 4 | logo设计 | 2018-09-21 A → 2018-09-21 08:00 A | 2018-09-21 A → 2018-09-21 09:00 A | 1d → 0.12d |  |  | 98 → 86 |  |
| 5 | 软件资源配置 | 2018-09-21 A → 2018-09-21 08:00 A | 2018-09-21 A → 2018-09-21 12:00 A | 1d → 0.5d |  |  | 98 → 86 | resources 罗培城 → 罗培铖 |
| 6 | 可行性分析文档起草 | 2018-09-28 A → 2018-09-26 10:36 A (-2d) | 2018-09-28 A → 2018-09-26 16:36 A (-2d) | 1d → 0.62d |  |  | 100 → 87 | was named 可行性分析; resources none → 罗培铖 |
| 7 | **项目计划** | 2018-09-28 → 2018-09-14 18:00 (-14d) | 2018-11-30 → 2018-10-24 18:00 (-37d) | 51d → 35.62d | 23% → 100% |  |  |  |
| 9 | 甘特图 | 2018-09-29 A → 2018-09-29 09:00 A | 2018-09-29 A → 2018-09-29 20:00 A | 1d → 1.12d |  |  | 可行性分析文档完成 → 6 | constraint none → finish no earlier than 2018-09-29 18:00 |
| 10 | OBS | 2018-09-29 A → 2018-09-29 09:00 A | 2018-09-29 A → 2018-09-30 13:30 A (+1d) | 0.5d → 1.31d |  |  | 可行性分析文档完成 → 9 | constraint none → finish no earlier than 2018-09-29 18:00 |
| 11 | WBS | 2018-09-29 A → 2018-09-29 09:00 A | 2018-09-29 A → 2018-09-29 21:00 A | 0.5d → 0.38d |  |  | 10 → 9 | constraint none → start no earlier than 2018-09-29 09:00 |
| 17 | 软件开发计划起草 | 2018-10-08 A → 2018-10-20 09:00 A (+12d) | 2018-10-08 A → 2018-10-20 15:00 A (+12d) | 1d → 0.75d |  |  | 项目计划修订 → 94 | was named 用户群分类; resources 张嘉诚 → 苏碧青 |
| 18 | 需求工程计划-初步 | 2018-10-11 A → 2018-10-20 09:00 A (+9d) | 2018-10-11 A → 2018-10-20 13:00 A (+9d) | 0.1d → 0.5d |  |  | 103 → 94 | was named 建立核心队伍; resources 赵豪杰 → 张嘉诚 |
| 20 | 项目章程修订 | 2018-10-11 A → 2018-10-21 09:00 A (+10d) | 2018-10-11 A → 2018-10-21 11:00 A (+10d) | 0.1d → 0.25d |  |  | 103 → 94 | was named 选择产品代表; resources 苏碧青 → 赵豪杰 |
| 24 | **项目执行** | 2018-09-30 A → 2018-10-21 09:00 A (+21d) | 2018-09-30 A → 2019-01-06 18:00 (+98d) | 1d → 68d | 100% → 20% | none → 2.5d | 需求工程阶段-初步 → 7 | was named 需求工程阶段-修订 |
| 26 | **需求获取** | 2018-10-08 A → 2018-10-21 09:00 A (+13d) | 2018-10-16 → 2018-10-31 18:00 (+15d) | 8d → 9.75d | 47% → 100% |  | 24 → 93 |  |
| 27 | 定义愿景和范围 | 2018-10-08 A → 2018-10-21 09:00 A (+13d) | 2018-10-08 A → 2018-10-21 13:00 A (+13d) | 0.5d → 0.25d |  |  | 项目计划修订 → 93 |  |
| 31 | 确定质量属性 | 2018-10-12 → 2018-10-27 09:00 A (+15d) | 2018-10-12 → 2018-10-27 14:15 A (+15d) | 0.5d → 0.66d | 0% → 100% |  | 106 → 95 | resources 张嘉诚 → 罗培铖 |
| 42 | **需求分析** | 2018-10-17 → 2018-11-01 09:00 (+15d) | 2018-10-25 → 2018-11-06 09:00 (+12d) | 7d → 4.12d |  | none → 0d |  |  |
| 43 | 绘制关联图 | 2018-10-16 → 2018-11-01 09:00 (+16d) | 2018-10-17 → 2018-11-01 18:00 (+15d) |  |  |  | 需求整理 → 31 | resources 苏碧青 → 赵豪杰 |
| 44 | 分析可行性 | 2018-10-16 → 2018-11-02 08:00 (+17d) | 2018-10-17 → 2018-11-02 17:00 (+16d) |  |  |  | 需求整理 → 43 | resources 罗培城 → 罗培铖 |
| 45 | 确定需求优先级 | 2018-10-16 → 2018-11-02 08:00 (+17d) | 2018-10-17 → 2018-11-02 17:00 (+16d) |  |  |  | 需求整理 → 43 | resources 张嘉诚 → 罗培铖 |
| 46 | 编写数据字典 | 2018-10-24 → 2018-11-02 08:00 (+9d) | 2018-10-24 → 2018-11-02 09:36 (+9d) | 1d → 0.2d |  |  | 与杨枨老师进行需求访谈 → 43 | resources 张嘉诚 → 罗培铖 |
| 47 | **需求建模** | 2018-10-16 → 2018-11-03 09:00 (+18d) | 2018-10-17 → 2018-11-04 18:00 (+18d) | 1d → 2d |  |  | 需求整理 → 44, 45, 46 | was named 创建开发原型; resources 郑丞钧 → none |
| 52 | **需求规格说明** | 2018-10-26 → 2018-11-06 10:00 (+11d) | 2018-11-08 → 2018-11-13 18:00 (+5d) | 12d → 7d |  |  |  |  |
| 53 | 采用软件需求规格说明模板 | 2018-10-26 → 2018-11-06 10:00 (+11d) | 2018-10-26 → 2018-11-07 11:00 (+12d) | 1d → 1.12d |  | none → 2.45d | UML学习 → 47 |  |
| 54 | 指明需求来源 | 2018-10-27 → 2018-11-07 11:00 (+11d) | 2018-10-27 → 2018-11-07 15:36 (+11d) | 1d → 0.45d |  | none → 2.45d |  | resources 郑丞钧 → 苏碧青 |
| 55 | 钓鱼用户访谈 | 2018-10-28 → 2018-11-07 15:36 (+10d) | 2018-10-28 → 2018-11-08 16:24 (+11d) | 0.9d → 1.1d |  | none → 2.45d |  | resources 罗培城; 苏碧青; 张嘉诚; 赵豪杰; 郑丞钧 → 罗培铖; 苏碧青; 张嘉诚; 赵豪杰; 郑丞钧 |
| 56 | 为每个需求分配唯一标识 | 2018-10-29 → 2018-11-09 16:24 (+11d) | 2018-10-29 → 2018-11-10 20:24 (+12d) | 0.2d → 1d |  | none → 2.95d | 138 → 98 |  |
| 57 | 记录业务规范 | 2018-10-30 → 2018-11-10 20:24 (+11d) | 2018-10-30 → 2018-11-11 20:24 (+12d) |  |  | none → 2.95d | 138 → 56 |  |
| 58 | 整理成需求规格说明书 | 2018-11-01 → 2018-11-11 20:24 (+10d) | 2018-11-01 → 2018-11-13 08:24 (+12d) | 1d → 0.25d |  | none → 2.95d | 94 → 57 | constraint none → finish no earlier than 2018-11-11 18:00; resources 赵豪杰 → 罗培铖 |
| 60 | **验证** | 2018-11-05 → 2018-11-16 09:00 (+11d) | 2018-11-08 → 2018-11-21 18:00 (+13d) | 4d → 5.12d |  |  | 52 → 53 |  |
| 61 | 评审需求 | 2018-11-05 → 2018-11-16 08:00 (+11d) | 2018-11-05 → 2018-11-16 17:00 (+11d) |  |  |  | 小组会议 → 100 | resources 罗培城; 苏碧青; 张嘉诚; 赵豪杰; 郑丞钧 → 罗培铖; 苏碧青; 张嘉诚; 赵豪杰; 郑丞钧 |
| 62 | 测试需求 | 2018-11-06 → 2018-11-19 09:00 (+13d) | 2018-11-06 → 2018-11-19 17:00 (+13d) |  |  |  |  | resources 罗培城; 苏碧青 → 罗培铖; 苏碧青 |
| 63 | 原型修改 | 2018-11-07 → 2018-11-20 08:00 (+13d) | 2018-11-07 → 2018-11-20 17:00 (+13d) | 1d → 1d? |  |  |  |  |
| 66 | **第二次迭代** | 2018-11-09 → 2018-11-22 08:00 (+13d) | 2018-11-16 → 2018-11-29 18:00 (+13d) | 7d → 7.12d |  | none → 0d | 128 → 25 |  |
| 67 | **需求分析** | 2018-11-09 → 2018-11-22 09:00 (+13d) | 2018-11-12 → 2018-11-26 18:00 (+14d) | 3d → 5d |  | 0d → none | 小组会议 → 25 |  |
| 68 | 细化用户需求 | 2018-11-09 → 2018-11-22 08:00 (+13d) | 2018-11-09 → 2018-11-22 17:00 (+13d) | 1d → 1d? |  |  | 小组会议 → 101 | resources 罗培城 → 罗培铖 |
| 69 | 得出功能需求 | 2018-11-09 → 2018-11-22 08:00 (+13d) | 2018-11-09 → 2018-11-22 17:00 (+13d) | 1d → 1d? |  |  | 小组会议 → 101 |  |
| 70 | 修改数据字典 | 2018-11-10 → 2018-11-23 08:00 (+13d) | 2018-11-10 → 2018-11-23 17:00 (+13d) | 1d → 1d? |  |  |  |  |
| 71 | 需求建模 | 2018-10-24 → 2018-11-24 12:00 (+31d) | 2018-10-24 → 2018-11-24 13:00 (+31d) | 1d → 0.12d |  |  | 与杨枨老师进行需求访谈 → 70 |  |
| 73 | **原型开发** | 2018-11-13 → 2018-11-27 09:00 (+14d) | 2018-11-16 → 2018-11-29 18:00 (+13d) | 4d → 3d |  |  |  |  |
| 74 | 界面布局设计 | 2018-11-13 → 2018-11-27 08:00 (+14d) | 2018-11-13 → 2018-11-27 17:00 (+14d) |  |  |  | 需求建模 → 67 | resources 罗培城 → 罗培铖 |
| 75 | 原件样式设计 | 2018-11-13 → 2018-11-27 09:00 (+14d) | 2018-11-13 → 2018-11-27 18:00 (+14d) |  |  |  | 需求建模 → 67 |  |
| 76 | 总体构建 | 2018-11-14 → 2018-11-28 08:00 (+14d) | 2018-11-14 → 2018-11-28 18:00 (+14d) | 1d → 1.12d |  |  |  |  |
| 77 | **编码/测试计划** | 2018-12-21 → 2018-12-18 08:00 (-3d) | 2019-01-05 → 2019-01-06 18:00 (+1d) | 12d → 17.88d |  |  |  |  |
| 79 | Android端编码 | 2018-12-21 → 2018-12-20 09:00 (-1d) | 2018-12-28 → 2018-12-23 17:00 (-5d) | 6d → 3.5d |  | none → 5.45d | 123 → 78 | constraint none → start no earlier than 2018-12-20 09:00; resources 苏碧青; 张嘉诚; 罗培城 → 苏碧青; 张嘉诚; 罗培铖 |
| 80 | 服务器端编码 | 2018-12-21 → 2018-12-20 09:00 (-1d) | 2018-12-28 → 2018-12-28 17:00 | 6d → 8d |  |  | 123 → 78 |  |
| 82 | 联合调试 | 2018-12-31 → 2018-12-29 09:00 (-2d) | 2019-01-05 → 2019-01-04 11:00 (-1d) | 6d → 5.88d |  | 3d → none | 79, 80 → 81 | constraint finish no earlier than 2019-01-05 → none; resources 罗培城; 苏碧青; 张嘉诚; 赵豪杰; 郑丞钧 → 罗培铖; 苏碧青; 张嘉诚; 赵豪杰; 郑丞钧 |
| 85 | **项目控制** | 2018-12-03 → 2018-09-19 09:00 (-75d) | 2018-12-31 → 2019-01-09 18:00 (+9d) | 22d → 99d | 0% → 8% |  | 7 → none |  |
| 87 | 与杨枨老师确认项目大致内容 | 2018-09-26 A → 2018-09-26 09:00 A | 2018-09-26 A → 2018-09-26 09:12 A | 1d → 0.03d |  |  | UML学习 → 4, 5 | constraint start no earlier than 2018-09-26 → none; resources 罗培城; 苏碧青; 张嘉诚; 赵豪杰; 郑丞钧 → 罗培铖; 苏碧青; 张嘉诚; 赵豪杰; 郑丞钧 |
| 89 | 组长检查 | 2018-09-29 A → 2018-09-28 13:00 A (-1d) | 2018-09-29 A → 2018-09-28 14:00 A (-1d) | 1d → 0.12d |  |  | 可行性分析文档完成 → 8, 9, 10, 11 | was named 项目章程 |
| 90 | 第二次小组会议 | 2018-09-29 A → 2018-09-28 13:48 A (-1d) | 2018-09-29 A → 2018-09-28 14:00 A (-1d) | 1d → 0.03d |  |  | 可行性分析文档完成 → 89 | was named 项目计划起草; resources 罗培城; 苏碧青; 张嘉诚; 郑丞钧 → 罗培铖; 苏碧青; 张嘉诚; 赵豪杰; 郑丞钧 |
| 93 | 与杨枨老师进行客户访谈 | 2018-10-08 A → 2018-10-18 09:00 A (+10d) | 2018-10-08 A → 2018-10-18 10:00 A (+10d) | 0.5d → 0.12d |  |  | 项目计划修订 → 92 | was named 确定需求开发过程; resources 赵豪杰 → 罗培铖; 苏碧青; 张嘉诚; 赵豪杰; 郑丞钧 |
| 94 | 第四次小组会议 | 2018-10-31 → 2018-10-18 09:00 A (-13d) | 2018-10-31 → 2018-10-18 10:36 A (-13d) | 1d → 0.2d | 0% → 100% |  | 57 → 93 | was named 小组会议; resources 罗培城; 苏碧青; 张嘉诚; 赵豪杰; 郑丞钧 → 罗培铖; 苏碧青; 张嘉诚; 赵豪杰; 郑丞钧 |
| 98 | 小组会议 | 2018-09-20 A → 2018-11-08 16:24 (+49d) | 2018-09-20 A → 2018-11-09 16:24 (+50d) | 1d → 1d? | 100% → 0% |  | 3 → 55 | resources 赵豪杰; 张嘉诚; 罗培城; 苏碧青; 郑丞钧 → 罗培铖; 苏碧青; 张嘉诚; 赵豪杰; 郑丞钧 |
| 99 | 与杨枨老师进行交流 | 2018-11-02 → 2018-11-14 08:00 (+12d) | 2018-11-02 → 2018-11-14 17:00 (+12d) | 0.2d → 1d |  |  |  | resources 罗培城; 苏碧青; 张嘉诚; 郑丞钧; 赵豪杰 → 罗培铖; 苏碧青; 张嘉诚; 赵豪杰; 郑丞钧 |
| 100 | 小组会议 | 2018-09-27 A → 2018-11-15 08:00 (+49d) | 2018-09-27 A → 2018-11-15 17:00 (+49d) |  | 100% → 0% |  | 87 → 99 | resources 罗培城; 苏碧青; 张嘉诚; 赵豪杰; 郑丞钧 → 罗培铖; 苏碧青; 张嘉诚; 赵豪杰; 郑丞钧 |
| 101 | 小组会议 | 2018-12-18 → 2018-11-21 08:00 (-27d) | 2018-12-18 → 2018-11-21 17:00 (-27d) | 1d → 1d? |  |  | 118 → 63 | resources 罗培城; 苏碧青; 张嘉诚; 赵豪杰; 郑丞钧 → 罗培铖; 苏碧青; 张嘉诚; 赵豪杰; 郑丞钧 |
| 102 | 与杨枨老师进行交流 | 2018-11-16 → 2018-11-29 08:00 (+13d) | 2018-11-16 → 2018-11-29 09:36 (+13d) | 1d → 0.2d? |  |  | 小组会议 → 76 | resources 罗培城; 苏碧青; 张嘉诚; 赵豪杰; 郑丞钧 → 罗培铖; 苏碧青; 张嘉诚; 赵豪杰; 郑丞钧 |
| 103 | 小组会议 | 2018-10-10 A → 2018-11-29 09:36 (+50d) | 2018-10-10 A → 2018-11-29 12:00 (+50d) | 1d → 0.3d | 100% → 0% |  | 17 → 102 | resources 苏碧青; 张嘉诚; 赵豪杰; 郑丞钧; 罗培城 → 罗培铖; 苏碧青; 张嘉诚; 赵豪杰; 郑丞钧 |
| 104 | **需求规格审核** | 2018-12-03 → 2018-11-30 09:00 (-3d) | 2018-12-07 → 2018-12-06 18:00 (-1d) | 5d → 6.12d |  |  | 102 → 103 |  |
| 105 | 审查需求文档 | 2018-12-03 → 2018-11-29 13:00 (-4d) | 2018-12-03 → 2018-11-30 12:00 (-3d) | 1d → 1d? |  |  | 102 → 103 |  |
| 106 | 小组会议 | 2018-10-11 → 2018-11-30 13:00 (+50d) | 2018-10-11 → 2018-12-01 16:00 (+51d) | 0.1d → 1d? |  |  | 与杨枨老师进行需求访谈 → 105 | resources 罗培城; 苏碧青; 张嘉诚; 赵豪杰; 郑丞钧 → 罗培铖; 苏碧青; 张嘉诚; 赵豪杰; 郑丞钧 |
| 107 | 编写需求文档 | 2018-12-05 → 2018-12-03 13:00 (-2d) | 2018-12-05 → 2018-12-04 09:00 (-1d) | 1d → 1d? |  |  | 小组会议 → 106 | resources 罗培城 → 罗培铖 |
| 108 | 编写用户手册 | 2018-12-05 → 2018-12-03 13:00 (-2d) | 2018-12-05 → 2018-12-04 09:00 (-1d) | 1d → 1d? |  |  | 小组会议 → 106 |  |
| 109 | 确定合格的标准 | 2018-12-05 → 2018-12-03 13:00 (-2d) | 2018-12-05 → 2018-12-04 09:00 (-1d) | 1d → 1d? |  |  | 小组会议 → 106 |  |
| 110 | 小组会议 | 2018-10-16 → 2018-12-04 13:00 (+49d) | 2018-10-16 → 2018-12-05 12:00 (+50d) | 0.1d → 1d? |  |  | 与杨枨老师进行需求确认 → 107, 108, 109 | resources 罗培城; 苏碧青; 张嘉诚; 赵豪杰; 郑丞钧 → 罗培铖; 苏碧青; 张嘉诚; 赵豪杰; 郑丞钧 |
| 111 | 与杨枨老师进行交流 | 2018-12-07 → 2018-12-05 13:00 (-2d) | 2018-12-07 → 2018-12-06 12:00 (-1d) | 1d → 1d? |  |  | 小组会议 → 110 | resources 罗培城; 苏碧青; 张嘉诚; 赵豪杰; 郑丞钧 → 罗培铖; 苏碧青; 张嘉诚; 赵豪杰; 郑丞钧 |
| 112 | **需求管理** | 2018-12-10 → 2018-12-07 08:00 (-3d) | 2018-12-20 → 2018-12-17 17:00 (-3d) | 10d → 10.12d |  |  |  |  |
| 113 | 小组会议 | 2018-10-17 → 2018-12-07 08:00 (+51d) | 2018-10-17 → 2018-12-07 17:00 (+51d) | 0.1d → 1d? |  |  | 45 → 104 | resources 罗培城; 苏碧青; 张嘉诚; 赵豪杰; 郑丞钧 → 罗培铖; 苏碧青; 张嘉诚; 赵豪杰; 郑丞钧 |

| ID | Task | Start | Finish | Duration | Complete | Total float | Predecessors | Other |
| --- | --- | --- | --- | --- | --- | --- | --- | --- |
| 114 | 确定变更控制过程 | 2018-12-11 → 2018-12-08 12:00 (-3d) | 2018-12-11 → 2018-12-08 14:24 (-3d) | 1d → 0.3d? |  |  | 小组会议 → 113 |  |
| 115 | 建立变更控制委员会 | 2018-12-12 → 2018-12-08 12:00 (-4d) | 2018-12-12 → 2018-12-08 14:24 (-4d) | 1d → 0.3d? |  |  | 小组会议 → 113 |  |
| 116 | 进行变更影响分析 | 2018-12-13 → 2018-12-10 10:24 (-3d) | 2018-12-13 → 2018-12-10 18:24 (-3d) | 1d → 1d? |  |  | 115 → 114, 115 | resources 罗培城 → 罗培铖 |
| 117 | 跟踪每一项变更 | 2018-12-14 → 2018-12-11 10:24 (-3d) | 2018-12-14 → 2018-12-12 10:24 (-2d) | 1d → 1d? |  |  |  |  |
| 118 | 编写需求文档的基准版本和控制版本 | 2018-12-15 → 2018-12-12 10:24 (-3d) | 2018-12-15 → 2018-12-13 10:24 (-2d) | 1d → 1d? |  |  |  |  |
| 119 | 维护变更历史纪录 | 2018-12-17 → 2018-12-13 10:24 (-4d) | 2018-12-17 → 2018-12-13 12:00 (-4d) | 1d → 0.2d |  |  |  |  |
| 120 | 小组会议 | 2018-10-23 → 2018-12-13 10:24 (+51d) | 2018-10-23 → 2018-12-13 12:00 (+51d) |  |  |  | 与杨枨老师进行需求访谈 → 118 | resources 罗培城; 苏碧青; 张嘉诚; 赵豪杰; 郑丞钧 → 罗培铖; 苏碧青; 张嘉诚; 赵豪杰; 郑丞钧 |
| 121 | 跟踪需求状态 | 2018-12-19 → 2018-12-13 13:00 (-6d) | 2018-12-19 → 2018-12-14 12:00 (-5d) | 1d → 1d? |  |  | 101 → 120 |  |
| 122 | 衡量需求稳定性 | 2018-12-19 → 2018-12-13 13:00 (-6d) | 2018-12-19 → 2018-12-14 12:00 (-5d) | 1d → 1d? |  |  | 101 → 120 | resources 罗培城 → 罗培铖 |
| 123 | 使用需求管理工具 | 2018-12-20 → 2018-12-14 13:00 (-6d) | 2018-12-20 → 2018-12-15 16:00 (-5d) | 1d → 1d? |  |  | 122 → 121, 122 |  |
| 124 | **项目收尾** | 2019-01-06 → 2019-01-06 09:00 | 2019-01-09 → 2019-01-09 18:00 | 4d → 3.62d |  |  | 85 → 77 |  |
| 126 | 制作PPT | 2019-01-07 → 2019-01-08 14:00 (+1d) | 2019-01-07 → 2019-01-09 14:00 (+2d) |  |  |  | 114 → 125 |  |
| 127 | 答辩 | 2019-01-09 → 2019-01-09 14:00 | 2019-01-09 → 2019-01-09 18:00 | 1d → 0.5d |  |  | 116 → 126 | resources 罗培城; 苏碧青; 张嘉诚; 赵豪杰; 郑丞钧 → 罗培铖; 苏碧青; 张嘉诚; 赵豪杰; 郑丞钧 |
| 128 | **UML翻转课堂** | 2018-09-29 A → 2018-10-13 09:00 A (+14d) | 2018-11-08 → 2018-11-07 18:00 (-1d) | 33d → 23d | 30% → 75% | 0d → none | 可行性分析文档完成 → none | was named 第一次迭代 |
| 136 | UML评审 | 2018-10-18 → 2018-10-31 09:00 (+13d) | 2018-10-18 → 2018-10-31 10:36 (+13d) | 1d → 0.2d |  |  | 113 → 135 | was named UML学习; resources 罗培城; 苏碧青; 张嘉诚; 赵豪杰; 郑丞钧 → 罗培铖; 苏碧青; 张嘉诚; 赵豪杰; 郑丞钧 |
| 138 | 基础2:ppt | 2018-10-28 → 2018-11-04 12:00 (+7d) | 2018-10-28 → 2018-11-04 21:00 (+7d) | 0.1d → 1d |  |  | 55 → 137 | was named 小组会议; resources 罗培城; 苏碧青; 张嘉诚; 赵豪杰; 郑丞钧 → 张嘉诚 |
| 139 | UML评审 | 2018-10-29 → 2018-11-07 09:00 (+9d) | 2018-10-29 → 2018-11-07 10:36 (+9d) | 0.8d → 0.2d |  |  |  | was named UML学习; resources 罗培城; 苏碧青; 张嘉诚; 赵豪杰; 郑丞钧 → 罗培铖; 苏碧青; 张嘉诚; 赵豪杰; 郑丞钧 |

## Version 4 (saved 2018-10-31)

Note of the change: modify_GANTT图_v1.1.9

Last finish stays 2019-01-09.

Changed:

| ID | Task | Finish | Duration |
| --- | --- | --- | --- |
| 23 | 软件开发计划修订 | 2018-10-21 17:00 A → 2018-10-21 19:00 A | 0.5d → 0.62d |
| 33 | 甘特图修订 | 2018-10-28 20:52 A → 2018-10-28 19:52 A | 0.98d → 0.86d |
| 37 | 需求工程项目计划修订 | 2018-10-28 20:00 A → 2018-10-28 19:00 A | 0.25d → 0.12d |
| 97 | 第一次评审 | 2018-10-28 19:36 → 2018-10-28 18:12 | 0.2d → 0.03d |

## Version 5 (saved 2019-01-12)

Note of the change: Merge branch 'modify_甘特图修订' into ModifyingMaster

Last finish 2019-01-09 → 2019-01-16 (+7d). Complete tasks 53 → 198.

Added:

| ID | Task | Duration | Start | Finish | Predecessors | Constraint | Resources |
| --- | --- | --- | --- | --- | --- | --- | --- |
| 2 | **知识准备——UML翻转课堂** | 27.88d? | 2018-10-12 09:00 A | 2018-12-23 18:00 A |  |  |  |
| 4 | UML概论ppt制作 | 1d | 2018-10-14 09:00 A | 2018-10-14 17:00 A | 3 |  | 张嘉诚 |
| 5 | UML概述修改 | 0.12d | 2018-10-15 09:00 A | 2018-10-15 10:00 A | 4 |  | 赵豪杰 |
| 6 | UML概述修改 | 1d | 2018-10-17 09:00 A | 2018-10-17 18:00 A | 5 |  | 罗培铖 |
| 7 | UML概述修改 | 0.06d | 2018-10-17 09:00 A | 2018-10-17 09:30 A | 6 | start no earlier than 2018-10-17 09:00 | 张嘉诚 |
| 8 | UML概述修改 | 1d | 2018-10-19 09:00 A | 2018-10-19 18:00 A | 7 |  | 罗培铖 |
| 9 | UML概论评审 | 0.03d | 2018-10-19 09:00 A | 2018-10-19 09:12 A | 8 |  | 罗培铖; 苏碧青; 张嘉诚; 赵豪杰; 郑丞钧 |
| 11 | UML工具:Rational Rose ppt修改 | 0.06d | 2018-10-21 18:12 A | 2018-10-21 18:42 A | 10 | finish no earlier than 2018-10-21 18:00 | 赵豪杰 |
| 12 | UML概述修改 | 1.12d | 2018-10-21 09:00 A | 2018-10-21 19:00 A | 9 |  | 张嘉诚 |
| 13 | UML工具:Rational Rose ppt修改 | 1d | 2018-10-23 09:00 A | 2018-10-23 18:00 A | 11 |  | 张嘉诚 |
| 14 | UML工具:Rational Rose评审 | 0.2d | 2018-10-24 09:00 A | 2018-10-24 10:36 A | 11 |  | 罗培铖; 苏碧青; 张嘉诚; 赵豪杰; 郑丞钧 |
| 17 | UML基础1:ppt修改 | 1d | 2018-10-30 09:00 A | 2018-10-30 18:00 A | 16 |  | 张嘉诚 |
| 18 | UML基础1评审 | 0.2d | 2018-10-31 09:00 A | 2018-10-31 10:36 A | 17 |  | 罗培铖; 苏碧青; 张嘉诚; 赵豪杰; 郑丞钧 |
| 20 | UML基础1:ppt修改 | 1d | 2018-11-02 09:00 A | 2018-11-02 18:00 A | 18 |  | 张嘉诚 |
| 21 | UML基础1:ppt修改 | 0.5d | 2018-11-02 09:00 A | 2018-11-02 14:00 A | 20 |  | 张嘉诚 |
| 22 | UML基础2:ppt | 1.25d | 2018-11-03 09:00 A | 2018-11-03 20:00 A | 19 |  | 张嘉诚 |
| 23 | UML基础2:ppt修改 | 0.06d? | 2018-11-03 18:00 A | 2018-11-03 18:30 A | 22 | finish no earlier than 2018-11-03 18:00 | 赵豪杰; 张嘉诚 |
| 24 | UML基础2:ppt修改 | 1d | 2018-11-04 12:00 A | 2018-11-04 21:00 A | 23 | start no earlier than 2018-11-04 09:00 | 罗培铖 |
| 25 | UML基础2:ppt修改 | 0.1d | 2018-11-04 12:00 A | 2018-11-04 12:48 A | 24 | start no earlier than 2018-11-04 09:00 | 罗培铖 |
| 26 | UML基础2:ppt修改 | 1d | 2018-11-06 09:00 A | 2018-11-06 18:00 A | 25 |  | 张嘉诚 |
| 27 | UML基础2:ppt修改 | 0.06d | 2018-11-06 09:00 A | 2018-11-06 09:30 A | 26 |  | 张嘉诚 |
| 28 | UML基础2:评审 | 0.2d | 2018-11-10 09:00 A | 2018-11-10 13:36 A | 27 |  | 罗培铖; 苏碧青; 张嘉诚; 赵豪杰; 郑丞钧 |
| 29 | UML基础3:材料制作 | 0.86d | 2018-12-09 12:00 A | 2018-12-09 19:52 A | 28 | finish no earlier than 2018-12-09 18:00 | 罗培铖 |
| 30 | UML基础3:ppt制作 | 0.12d? | 2018-12-09 19:52 A | 2018-12-09 20:52 A | 29 |  | 张嘉诚 |
| 31 | UML基础4:材料制作 | 0.69d? | 2018-12-22 12:00 A | 2018-12-22 18:30 A | 30 | start no earlier than 2018-12-22 09:00 | 罗培铖 |
| 32 | UML基础4:材料制作 | 0.38d? | 2018-12-23 12:00 A | 2018-12-23 15:00 A | 31 | start no earlier than 2018-12-23 09:00 | 罗培铖 |
| 33 | UML基础4:ppt制作 | 0.25d | 2018-12-23 15:00 A | 2018-12-23 18:00 A | 32 |  | 苏碧青 |
| 46 | 配置管理计划起草 | 1d | 2018-09-30 09:00 A | 2018-09-30 17:00 A | 172 |  | 罗培铖 |
| 49 | 需求工程项目计划ppt修订 | 0.12d? | 2018-10-14 12:00 A | 2018-10-14 13:00 A | 45, 175 | start no earlier than 2018-10-14 09:00 | 苏碧青 |
| 53 | 需求工程项目计划修订（初步） | 1.12d | 2018-10-21 09:00 A | 2018-10-21 19:00 A | 48, 178 |  | 苏碧青 |
| 66 | 更新WBS,OBS | 0.12d | 2018-10-28 18:52 A | 2018-10-28 19:52 A | 65, 180 |  | 苏碧青 |
| 67 | 修改Logo | 0.12d | 2018-10-28 12:00 A | 2018-10-28 13:00 A | 36, 180 | start no earlier than 2018-10-28 09:00 | 苏碧青 |
| 72 | 甘特图修订 | 0.38d | 2018-10-28 18:00 A | 2018-10-28 21:00 A | 65, 181 |  | 郑丞钧 |
| 76 | 可行性分析修订 | 1d? | 2018-10-30 08:00 A | 2018-10-30 17:00 A | 74, 182 |  | 罗培铖 |
| 77 | 配置管理计划修订 | 1d | 2018-10-30 09:00 A | 2018-10-30 18:00 A | 46, 182 |  | 罗培铖 |
| 79 | 配置管理计划修订 | 0.5d | 2018-10-30 09:00 A | 2018-10-30 14:00 A | 77 |  | 罗培铖 |
| 80 | 需求工程项目计划修订 | 1d | 2018-10-30 09:00 A | 2018-10-30 18:00 A | 75 |  | 苏碧青 |
| 82 | 配置管理计划修订 | 0.5d | 2018-10-30 14:00 A | 2018-10-30 18:00 A | 79 |  | 罗培铖 |
| 83 | 甘特图修订 | 1d | 2018-10-31 09:00 A | 2018-10-31 18:00 A | 78 |  | 张嘉诚 |
| 84 | 需求工程项目计划答辩ppt修订 | 1d | 2018-10-31 09:00 A | 2018-10-31 18:00 A | 73 | finish no earlier than 2018-10-31 18:00 | 张嘉诚 |
| 85 | 需求工程项目计划答辩ppt修订 | 0.5d | 2018-10-31 09:00 A | 2018-10-31 14:00 A | 84 |  | 张嘉诚 |
| 86 | 原型设计 | 0.62d | 2018-11-01 09:00 A | 2018-11-01 15:00 A | 60 | start no earlier than 2018-11-01 09:00 | 赵豪杰 |
| 87 | 项目章程修订 | 0.1d | 2018-11-01 09:00 A | 2018-11-01 09:48 A | 51 |  | 赵豪杰 |
| 88 | 需求工程项目计划修订 | 1.25d | 2018-11-03 09:00 A | 2018-11-03 20:00 A | 80, 185 |  | 苏碧青 |
| 89 | 需求工程项目计划修订 | 1d | 2018-11-04 12:00 A | 2018-11-04 21:00 A | 88 | start no earlier than 2018-11-04 09:00 | 郑丞钧 |
| 90 | 需求工程项目计划修订 | 0.05d | 2018-11-04 12:00 A | 2018-11-04 12:24 A | 89 | start no earlier than 2018-11-04 09:00 | 郑丞钧 |
| 91 | 软件开发计划修订 | 1d? | 2018-11-04 09:00 A | 2018-11-04 17:00 A | 81, 185 |  | 郑丞钧 |
| 92 | 甘特图修订 | 0.75d | 2018-11-04 09:00 A | 2018-11-04 15:00 A | 83, 185 |  | 郑丞钧 |
| 93 | 需求工程项目计划修订 | 0.06d? | 2018-11-05 19:00 A | 2018-11-05 19:30 A | 90 | finish no earlier than 2018-11-05 18:00 | 赵豪杰 |
| 94 | 软件开发计划修订 | 0.06d? | 2018-11-05 09:00 A | 2018-11-05 09:30 A | 91 | start no earlier than 2018-11-05 09:00 | 赵豪杰 |
| 95 | OBS修改 | 0.88d | 2018-11-06 09:00 A | 2018-11-06 17:00 A | 92, 185 |  | 苏碧青 |
| 96 | 需求工程项目计划答辩ppt修订 | 0.12d? | 2018-11-06 09:00 A | 2018-11-06 10:00 A | 85 |  | 张嘉诚 |
| 97 | 甘特图修订 | 0.38d | 2018-11-06 09:00 A | 2018-11-06 12:00 A | 92 |  | 郑丞钧 |
| 98 | 原型修订 | 0.12d | 2018-11-08 19:00 A | 2018-11-08 20:00 A | 86 | start no earlier than 2018-11-08 09:00 | 赵豪杰 |
| 99 | 可行性分析修订 | 0.12d? | 2018-11-11 12:00 A | 2018-11-11 16:00 A | 76, 190 | start no earlier than 2018-11-11 09:00 | 罗培铖 |
| 100 | 需求工程项目计划答辩ppt修订 | 0.05d? | 2018-11-11 12:00 A | 2018-11-11 12:24 A | 190, 96 |  | 赵豪杰 |
| 101 | 需求工程项目计划修订 | 1d? | 2018-11-11 12:00 A | 2018-11-11 21:00 A | 93 | start no earlier than 2018-11-11 09:00 | 苏碧青 |
| 102 | 愿景和范围文档修订 | 0.06d? | 2018-11-11 12:00 A | 2018-11-11 12:30 A | 190, 60 | start no earlier than 2018-11-11 09:00 | 张嘉诚 |
| 103 | 甘特图修订 | 0.5d? | 2018-11-11 12:00 A | 2018-11-11 16:00 A | 190, 97 | start no earlier than 2018-11-11 09:00 | 郑丞钧 |
| 104 | 需求工程项目计划答辩ppt修订 | 0.06d? | 2018-11-11 12:24 A | 2018-11-11 12:54 A | 100 | finish no earlier than 2018-11-11 18:00 | 张嘉诚 |
| 105 | 原型修订 | 0.12d | 2018-11-13 19:00 A | 2018-11-13 20:00 A | 98 | start no earlier than 2018-11-13 09:00 | 赵豪杰 |
| 107 | 愿景与范围修订 | 0.01d? | 2018-11-18 12:00 A | 2018-11-18 12:06 A | 193, 102 |  | 罗培铖 |
| 108 | 愿景与范围修订 | 0.01d? | 2018-11-18 12:06 A | 2018-11-18 12:12 A | 107 |  | 罗培铖 |
| 109 | 愿景与范围材料 | 0.19d? | 2018-11-18 12:12 A | 2018-11-18 13:42 A | 108 |  | 张嘉诚 |
| 110 | 甘特图修订 | 0.09d? | 2018-11-18 12:00 A | 2018-11-18 12:42 A | 193, 103 |  | 郑丞钧 |
| 111 | 用户分类文档起草 | 0.12d | 2018-11-18 12:00 A | 2018-11-18 13:00 A | 193 |  | 郑丞钧 |
| 112 | 愿景与范围修订 | 0.01d | 2018-11-18 13:42 A | 2018-11-18 13:48 A | 109 |  | 罗培铖 |
| 113 | 需求工程项目计划修订 | 1d | 2018-11-18 12:00 A | 2018-11-18 21:00 A | 193, 101 |  | 赵豪杰 |
| 114 | 用户分类文档修订 | 0.09d? | 2018-11-22 19:00 A | 2018-11-22 19:42 A | 194, 111 | start no earlier than 2018-11-22 09:00 | 郑丞钧 |
| 115 | 愿景与范围修订 | 0.12d | 2018-11-22 19:00 A | 2018-11-22 20:00 A | 194, 112 | start no earlier than 2018-11-22 09:00 | 罗培铖 |
| 116 | 用户分类文档修订 | 0.04d | 2018-11-22 19:42 A | 2018-11-22 20:00 A | 114 | finish no earlier than 2018-11-22 18:00 | 郑丞钧 |
| 117 | 愿景与范围修订 | 0d | 2018-11-22 09:00 A | 2018-11-22 20:00 A | 115 |  | 赵豪杰 |
| 118 | 愿景与范围修订 | 0.03d | 2018-11-25 09:00 A | 2018-11-25 12:12 A | 117 |  | 赵豪杰 |
| 119 | 需求工程项目计划修订 | 0.19d | 2018-11-25 19:30 A | 2018-11-25 21:00 A | 198, 113 |  | 赵豪杰 |
| 120 | 原型修订 | 0.12d | 2018-11-28 19:00 A | 2018-11-28 20:00 A | 105 | start no earlier than 2018-11-28 09:00 | 苏碧青 |
| 121 | 软件需求规格说明起草 | 0.12d? | 2018-11-28 19:00 A | 2018-11-28 20:00 A | 201 | start no earlier than 2018-11-28 09:00 | 赵豪杰 |
| 122 | 愿景与范围修订 | 0.01d | 2018-11-29 19:00 A | 2018-11-29 19:06 A | 118, 201 | start no earlier than 2018-11-29 09:00 | 罗培铖 |
| 123 | 用户分类文档修订 | 1d | 2018-12-01 12:00 A | 2018-12-01 21:00 A | 114, 201 | start no earlier than 2018-12-01 09:00 | 郑丞钧 |
| 124 | 需求工程项目计划修订 | 1d | 2018-12-02 12:00 A | 2018-12-02 21:00 A | 119, 202 | start no earlier than 2018-12-02 09:00 | 赵豪杰 |
| 125 | 原型修订 | 0.62d | 2018-12-02 12:00 A | 2018-12-02 21:00 A | 120, 202 | start no earlier than 2018-12-02 09:00 | 苏碧青 |
| 127 | 原型修订 | 0.12d | 2018-12-03 19:00 A | 2018-12-03 20:00 A | 125, 202 | finish no earlier than 2018-12-03 18:00 | 赵豪杰 |
| 128 | 用例说明起草 | 0.12d? | 2018-12-03 19:00 A | 2018-12-03 20:00 A | 202 | start no earlier than 2018-12-03 09:00 | 郑丞钧 |
| 130 | 原型修订 | 0.03d? | 2018-12-06 09:00 A | 2018-12-06 19:12 A | 127 |  | 赵豪杰 |
| 131 | 软件需求规格说明修订 | 0.12d? | 2018-12-07 19:00 A | 2018-12-07 20:00 A | 121 | start no earlier than 2018-12-07 09:00 | 赵豪杰 |
| 132 | 甘特图修订 | 1d? | 2018-12-09 12:00 A | 2018-12-09 21:00 A | 204, 110 | start no earlier than 2018-12-09 09:00 | 郑丞钧 |
| 133 | 软件需求规格说明修订 | 0.38d | 2018-12-09 12:00 A | 2018-12-09 15:00 A | 204, 131 | start no earlier than 2018-12-09 09:00 | 苏碧青 |
| 134 | QFD打分表起草 | 1d? | 2018-12-09 12:00 A | 2018-12-09 21:00 A | 204 | start no earlier than 2018-12-09 09:00 | 郑丞钧 |
| 135 | 需求工程项目计划修订 | 0.12d? | 2018-12-12 09:00 A | 2018-12-12 20:00 A | 124, 204 | start no earlier than 2018-12-12 09:00 | 赵豪杰 |
| 136 | 需求工程项目章程起草 | 0d? | 2018-12-12 09:00 A | 2018-12-12 19:01 A | 135, 204 | start no earlier than 2018-12-12 09:00 | 赵豪杰 |
| 137 | 项目章程修订 | 0.01d? | 2018-12-12 19:00 A | 2018-12-12 19:06 A | 87, 204 | start no earlier than 2018-12-12 09:00 | 赵豪杰 |
| 138 | 软件开发计划修订 | 0.01d? | 2018-12-12 19:00 A | 2018-12-12 19:06 A | 94, 204 | start no earlier than 2018-12-12 09:00 | 赵豪杰 |
| 139 | 原型修订 | 0d | 2018-12-13 09:00 A | 2018-12-13 19:01 A | 130, 204 | start no earlier than 2018-12-12 09:00 | 赵豪杰 |
| 140 | 软件需求规格说明修订 | 0.03d? | 2018-12-14 19:00 A | 2018-12-14 19:12 A | 133 | start no earlier than 2018-12-14 09:00 | 苏碧青 |
| 141 | 原型修订 | 0.12d | 2018-12-14 09:00 A | 2018-12-14 20:00 A | 139 |  | 赵豪杰 |
| 142 | 用例说明修订 | 0.12d? | 2018-12-15 12:00 A | 2018-12-15 13:00 A | 204, 128 | start no earlier than 2018-12-15 09:00 | 郑丞钧 |
| 143 | 需求跟踪矩阵起草 | 0.19d? | 2018-12-16 12:00 A | 2018-12-16 13:30 A | 206 | start no earlier than 2018-12-16 09:00 | 苏碧青 |
| 144 | 需求可行性论证 | 0.7d | 2018-12-16 09:00 A | 2018-12-16 18:36 A | 206 |  | 苏碧青 |
| 145 | 软件用户手册起草 | 0.62d? | 2018-12-16 12:00 A | 2018-12-16 17:00 A | 206, 141 | start no earlier than 2018-12-16 09:00 | 赵豪杰 |
| 146 | 需求条目详细信息报表 | 0.12d? | 2018-12-17 19:00 A | 2018-12-17 20:00 A | 206 | start no earlier than 2018-12-17 09:00 | 苏碧青 |
| 147 | 需求跟踪矩阵修订 | 0d? | 2018-12-17 09:00 A | 2018-12-17 09:00 A | 143 | start no earlier than 2018-12-17 09:00 | 苏碧青 |
| 148 | 用例说明修订 | 0.12d? | 2018-12-17 19:00 A | 2018-12-17 20:00 A | 142 | start no earlier than 2018-12-17 09:00 | 郑丞钧 |
| 149 | 后台界面原型起草 | 0.12d? | 2018-12-18 19:00 A | 2018-12-18 20:00 A | 207 | start no earlier than 2018-12-18 09:00 | 赵豪杰 |
| 150 | 需求条目详细信息报表修订 | 0.07d? | 2018-12-19 19:00 A | 2018-12-19 19:36 A | 146 | start no earlier than 2018-12-19 09:00 | 苏碧青 |
| 151 | 需求跟踪矩阵修订 | 0.05d? | 2018-12-19 19:00 A | 2018-12-19 19:24 A | 147 | start no earlier than 2018-12-19 09:00 | 苏碧青 |
| 152 | 测试用例起草 | 0.12d? | 2018-12-20 19:00 A | 2018-12-20 20:00 A | 148 | start no earlier than 2018-12-20 09:00 | 罗培铖 |
| 153 | 原型修订 | 0.12d? | 2018-12-21 19:00 A | 2018-12-21 20:00 A | 210, 209, 141 |  | 赵豪杰 |
| 154 | 原型修订 | 1d | 2018-12-22 12:00 A | 2018-12-22 21:00 A | 153 |  | 赵豪杰 |
| 155 | 状态图起草 | 1d | 2018-12-23 09:00 A | 2018-12-23 21:00 A | 210 |  | 苏碧青 |
| 156 | 用例说明修订 | 1d | 2018-12-23 12:00 A | 2018-12-23 21:00 A | 210, 148 | start no earlier than 2018-12-23 09:00 | 郑丞钧 |
| 157 | 软件用户手册修订 | 1d? | 2018-12-23 12:00 A | 2018-12-23 21:00 A | 210, 145, 154 | start no earlier than 2018-12-23 09:00 | 赵豪杰 |
| 158 | 特性树 | 1d | 2018-12-23 12:00 A | 2018-12-23 21:00 A | 210 | start no earlier than 2018-12-23 09:00 | 苏碧青 |
| 159 | 用户端用例图起草 | 0d? | 2018-12-23 21:00 A | 2018-12-23 21:00 A | 156 |  | 郑丞钧 |
| 160 | 测试用例修订 | 0.38d? | 2018-12-23 12:00 A | 2018-12-23 15:00 A | 152 | start no earlier than 2018-12-23 09:00 | 罗培铖 |
| 161 | 软件需求规格说明修订 | 0.25d? | 2018-12-23 09:00 A | 2018-12-23 14:00 A | 140, 159, 157, 156 | start no earlier than 2018-12-23 09:00 | 苏碧青 |
| 162 | 数据字典、ER图起草 | 0.12d? | 2018-12-24 18:00 A | 2018-12-24 20:00 A | 210, 156 | start no earlier than 2018-12-24 09:00 | 张嘉诚 |
| 163 | 用例说明修订 | 0.12d | 2018-12-24 09:00 A | 2018-12-24 20:00 A | 210, 156 |  | 张嘉诚 |
| 164 | 管理员用例图起草 | 0d? | 2018-12-24 09:00 A | 2018-12-24 19:01 A | 163 |  | 张嘉诚 |
| 166 | 需求规格审核 | 28.62d | 2018-10-21 19:00 | 2018-12-31 18:00 |  |  |  |
| 167 | 需求管理 | 28.62d | 2018-10-21 19:00 | 2018-12-31 18:00 |  | finish no earlier than 2019-05-25 18:00 |  |
| 173 | 第二周绩效考评 | 0.06d? | 2018-09-30 18:00 A | 2018-09-30 18:30 A | 36, 37, 42, 43, 44, 45, 46 |  | 赵豪杰 |
| 176 | 第三周绩效考评 | 0.06d | 2018-10-14 19:00 A | 2018-10-14 19:30 A | 47, 48, 49, 50 |  | 赵豪杰 |
| 179 | 第四周绩效考评 | 0.06d | 2018-10-21 18:00 A | 2018-10-21 18:30 A | 51, 53, 55, 56, 60 |  | 赵豪杰 |
| 182 | 第二次组内评审 | 0.12d | 2018-10-29 19:00 A | 2018-10-29 20:00 A | 72, 73, 74 |  | 罗培铖; 苏碧青; 张嘉诚; 赵豪杰; 郑丞钧 |
| 183 | 第五周绩效考评 | 0.06d | 2018-10-30 09:00 A | 2018-10-30 09:30 A | 82, 81, 80, 78, 76, 73, 67, 66, 63 | start no earlier than 2018-10-30 09:00 | 赵豪杰 |
| 184 | 第四次与杨枨老师进行访谈 | 0.03d | 2018-11-01 09:00 A | 2018-11-01 09:12 A | 86, 183 |  | 罗培铖; 苏碧青; 张嘉诚; 赵豪杰; 郑丞钧 |
| 185 | 第六次小组会议 | 0.88d | 2018-11-01 09:00 A | 2018-11-01 17:00 A | 184 |  | 罗培铖; 苏碧青; 张嘉诚; 赵豪杰; 郑丞钧 |
| 186 | 第六周绩效考评 | 1d | 2018-11-06 09:00 A | 2018-11-06 18:00 A | 95, 94, 93, 87, 86, 97, 96 |  | 赵豪杰 |
| 187 | 组内评审表起草 | 0.06d | 2018-11-06 09:00 A | 2018-11-06 09:30 A | 186 | start no earlier than 2018-11-06 09:00 | 赵豪杰 |
| 189 | 第七次小组会议 | 0.93d | 2018-11-07 09:36 A | 2018-11-07 20:00 A | 188 |  | 罗培铖; 苏碧青; 张嘉诚; 赵豪杰; 郑丞钧 |
| 190 | 团队建设 | 0.62d | 2018-11-09 09:00 A | 2018-11-10 17:00 A | 189 |  | 罗培铖; 苏碧青; 张嘉诚; 赵豪杰; 郑丞钧 |
| 191 | 第七周绩效考评 | 0.4d? | 2018-11-11 09:00 A | 2018-11-11 15:12 A | 99, 100, 101, 103, 104, 102 |  | 赵豪杰 |
| 194 | 第八周绩效考评 | 0.41d | 2018-11-18 13:48 A | 2018-11-18 18:03 A | 107, 108, 109, 110, 111, 112, 113 |  | 赵豪杰 |
| 195 | 第九次小组会议 | 0d? | 2018-11-22 20:00 A | 2018-11-23 19:01 A | 194, 114, 115, 116, 117 | start no earlier than 2018-11-22 09:00 | 罗培铖; 苏碧青; 张嘉诚; 赵豪杰; 郑丞钧 |
| 196 | 第一次与管理员访谈 | 0.05d? | 2018-11-23 19:00 A | 2018-11-23 19:24 A | 195 | start no earlier than 2018-11-23 09:00 | 罗培铖; 赵豪杰 |
| 197 | 第六次与杨枨老师进行访谈 | 0.19d? | 2018-11-25 15:30 A | 2018-11-25 18:00 A | 196 | finish no earlier than 2018-11-25 18:00 | 罗培铖; 苏碧青; 张嘉诚; 赵豪杰; 郑丞钧 |
| 198 | 第六次与杨枨老师访谈要点整理 | 0.19d | 2018-11-25 18:00 A | 2018-11-25 19:30 A | 197 |  | 赵豪杰 |
| 199 | 第九周绩效考评 | 0d? | 2018-11-25 21:00 A | 2018-11-25 21:00 A | 114, 115, 116, 117, 118, 119 | start no earlier than 2018-11-25 09:00 | 赵豪杰 |
| 201 | 第六次与杨枨老师访谈纪要 | 0.04d | 2018-11-27 09:00 A | 2018-11-27 19:18 A | 197, 198 |  | 苏碧青 |
| 203 | 第十周绩效考评 | 1d? | 2018-12-02 12:00 A | 2018-12-02 21:00 A | 120, 122, 123, 124, 125, 121 | start no earlier than 2018-12-02 09:00 | 赵豪杰 |
| 204 | 第十二次小组会议 | 0d? | 2018-12-06 20:00 A | 2018-12-06 20:00 A | 123, 124, 125, 127, 128, 129, 130, 203 | start no earlier than 2018-12-06 09:00 | 罗培铖; 苏碧青; 张嘉诚; 赵豪杰; 郑丞钧 |
| 205 | 第十一周绩效考评 | 0.01d | 2018-12-11 09:00 A | 2018-12-11 19:06 A | 127, 128, 129, 130, 131, 132, 133, 134 | start no earlier than 2018-12-11 09:00 | 赵豪杰 |
| 206 | 第十三次小组会议 | 0.06d? | 2018-12-15 12:00 A | 2018-12-15 12:30 A | 135, 136, 137, 138, 205, 139, 140, 141, 142 |  | 罗培铖; 苏碧青; 张嘉诚; 赵豪杰 |
| 207 | 第一次管理员用户代表访谈 | 0.09d? | 2018-12-16 12:00 A | 2018-12-16 12:45 A | 206 | start no earlier than 2018-12-16 09:00 | 苏碧青; 赵豪杰 |
| 208 | 第十二周绩效考评 | 0d? | 2018-12-17 20:00 A | 2018-12-17 20:00 A | 135, 136, 137, 138, 139, 140, 141, 142, 143, 144, 145, 146, 147, 207 | start no earlier than 2018-12-17 09:00 | 赵豪杰 |
| 209 | 第七次与杨枨老师进行访谈 | 0.11d? | 2018-12-19 19:00 A | 2018-12-19 19:54 A | 141 | start no earlier than 2018-12-19 09:00 | 罗培铖; 苏碧青; 张嘉诚; 赵豪杰; 郑丞钧 |
| 210 | 第十四次小组会议 | 0d? | 2018-12-20 18:00 A | 2018-12-20 20:00 A | 148, 149, 150, 151, 152, 209 | start no earlier than 2018-12-20 09:00 | 罗培铖; 苏碧青; 张嘉诚; 赵豪杰; 郑丞钧 |
| 211 | 第十三周绩效考评 | 0.01d | 2018-12-26 09:00 A | 2018-12-26 19:06 A | 148, 149, 150, 151, 152, 153, 154, 155, 156, 157, 158, 159, 160, 161, 162, 163, 164 |  | 赵豪杰 |
| 216 | 配置管理系统提交 | 0.75d | 2019-01-13 14:00 | 2019-01-16 18:00 |  | finish no earlier than 2019-01-16 18:00 | 赵豪杰 |
| 217 | 散伙饭 | 0.62d | 2019-01-13 14:00 | 2019-01-16 18:00 |  | finish no earlier than 2019-01-16 18:00 | 罗培铖; 苏碧青; 张嘉诚; 赵豪杰; 郑丞钧 |

Removed: 15 需求工程项目计划修订及ppt修改; 18 需求工程计划-初步; 43 绘制关联图; 44 分析可行性; 45 确定需求优先级; 46 编写数据字典; 47 需求建模; 49 交互图; 50 原型构建; 51 界面原型; 53 采用软件需求规格说明模板; 54 指明需求来源; 55 钓鱼用户访谈; 56 为每个需求分配唯一标识; 57 记录业务规范; 58 整理成需求规格说明书; 59 需求规格说明书修订; 61 评审需求; 62 测试需求; 63 原型修改; 64 软件需求变更文档; 65 系统设计与实现计划; 66 第二次迭代; 67 需求分析; 68 细化用户需求; 69 得出功能需求; 70 修改数据字典; 71 需求建模; 72 软件概要设计说明; 73 原型开发; 74 界面布局设计; 75 原件样式设计; 76 总体构建; 77 编码/测试计划; 78 培训计划; 79 Android端编码; 80 服务器端编码; 81 测试计划; 82 联合调试; 83 安装部署计划; 84 系统维护计划; 89 组长检查; 102 与杨枨老师进行交流; 103 小组会议; 104 需求规格审核; 105 审查需求文档; 106 小组会议; 107 编写需求文档; 108 编写用户手册; 109 确定合格的标准; 110 小组会议; 111 与杨枨老师进行交流; 112 需求管理; 113 小组会议; 114 确定变更控制过程; 115 建立变更控制委员会; 116 进行变更影响分析; 117 跟踪每一项变更; 118 编写需求文档的基准版本和控制版本; 119 维护变更历史纪录; 120 小组会议; 121 跟踪需求状态; 122 衡量需求稳定性; 123 使用需求管理工具; 128 UML翻转课堂; 130 UML概论及ppt制作; 131 UML评审; 133 UML评审; 136 UML评审; 138 基础2:ppt; 139 UML评审

Changed:

| ID | Task | Start | Finish | Duration | Complete | Total float | Predecessors | Other |
| --- | --- | --- | --- | --- | --- | --- | --- | --- |
| 1 | **软件工程系列渔乐生活APP需求工程计划** | 2018-09-19 09:00 → 2018-09-19 08:00 A | 2019-01-09 18:00 → 2019-01-16 18:00 (+7d) | 99d → 45.5d | 28% → 57% |  |  |  |
| 3 | UML概述材料 | 2018-10-13 09:00 A → 2018-10-12 09:00 A (-1d) | 2018-10-13 16:00 A → 2018-10-12 16:00 A (-1d) |  |  |  |  |  |
| 10 | UML工具:Rational Rose及ppt制作 |  | 2018-10-21 19:12 A → 2018-10-21 18:12 A | 1.15d → 1.02d |  |  | UML评审 → 9 |  |
| 15 | UML基础1的ppt材料制作 |  |  |  |  |  | UML评审 → 14 | resources 赵豪杰 → 赵豪杰; 郑丞钧; 苏碧青; 罗培铖 |
| 16 | UML基础1:ppt |  | 2018-10-28 14:30 A → 2018-10-28 16:00 A | 0.69d → 0.75d |  |  |  |  |
| 19 | UML基础2的ppt材料制作 | 2018-11-03 12:00 → 2018-11-01 09:00 A (-2d) | 2018-11-03 14:00 → 2018-11-01 11:00 A (-2d) |  | 0% → 100% | 57.8d → none | UML评审 → 18 | constraint start no earlier than 2018-11-03 09:00 → start no earlier than 2018-11-01 09:00; resources 赵豪杰 → 罗培铖 |
| 34 | **项目启动** | 2018-09-19 09:00 → 2018-09-19 08:00 A | 2018-09-28 18:00 → 2018-09-26 16:36 A (-2d) | 9.12d → 2.62d |  |  |  |  |
| 39 | **项目计划** | 2018-09-14 18:00 → 2018-09-28 09:00 A (+14d) | 2018-10-24 18:00 → 2018-10-21 19:00 A (-3d) | 35.62d → 7.12d? |  |  |  |  |
| 40 | 需求工程项目计划起草 |  |  |  |  |  | 38 → 171 |  |
| 41 | 甘特图 |  |  |  |  |  | 38 → 172 |  |
| 42 | OBS |  | 2018-09-30 13:30 A → 2018-09-29 21:00 A (-1d) | 1.31d → 1.14d |  |  |  | constraint finish no earlier than 2018-09-29 18:00 → none |
| 43 | WBS |  | 2018-09-29 21:00 A → 2018-09-29 19:00 A | 0.38d → 0.25d |  |  |  | constraint start no earlier than 2018-09-29 09:00 → none |
| 45 | 需求工程项目计划ppt制作 | 2018-09-29 09:00 A → 2018-09-30 09:00 A (+1d) | 2018-09-30 17:00 A → 2018-09-30 20:40 A | 1.25d → 0.96d |  |  | 40 → 172, 40 | constraint finish no earlier than 2018-09-30 18:00 → none |
| 47 | 可行性分析文档修改 |  | 2018-10-14 15:00 A → 2018-10-14 13:00 A |  |  |  | 175 → 175, 38 |  |
| 48 | 需求工程项目计划修订 | 2018-10-21 09:00 A → 2018-10-14 09:00 A (-7d) | 2018-10-21 17:00 A → 2018-10-14 19:00 A (-7d) | 1d → 1.12d |  |  | 178 → 171, 175 |  |
| 50 | 甘特图修订 |  |  |  |  |  | 175 → 41, 175 |  |
| 51 | 项目章程修订 | 2018-10-21 09:00 A → 2018-10-20 09:00 A (-1d) | 2018-10-21 11:00 A → 2018-10-20 11:00 A (-1d) |  |  |  | 178 → 44, 178 |  |
| 54 | 软件开发计划修订 |  | 2018-10-21 13:00 A → 2018-10-21 12:00 A |  |  |  | 52 → 52, 178 |  |
| 55 | 甘特图修订 | 2018-10-20 09:00 A → 2018-10-21 09:00 A (+1d) | 2018-10-20 16:24 A → 2018-10-21 16:24 A (+1d) |  |  |  | 178 → 50, 178 |  |
| 56 | 软件开发计划修订 | 2018-10-21 13:00 A → 2018-10-21 09:00 A | 2018-10-21 19:00 A → 2018-10-21 16:00 A | 0.62d → 0.5d |  |  |  |  |
| 57 | **项目执行** |  | 2019-01-06 18:00 → 2018-12-31 18:00 (-6d) | 68d → 27.12d? | 20% → 41% | 2.5d → 4.38d |  |  |
| 58 | **第一轮迭代** |  | 2018-11-21 18:00 → 2018-12-31 18:00 (+40d) | 27.62d → 27.12d? | 40% → 41% | 0d → 4.38d |  |  |
| 59 | **需求获取** |  | 2018-10-31 18:00 → 2018-11-13 20:00 A (+13d) | 9.75d → 9d? |  |  | 177 → 39 |  |
| 60 | 定义愿景和范围起草 |  | 2018-10-21 13:00 A → 2018-10-21 11:00 A |  |  |  | 177 → 178 | was named 定义愿景和范围 |
| 61 | 需求工程项目计划修订 |  |  |  |  |  | 180 → 180, 53 |  |
| 64 | 需求工程项目计划修订 |  |  |  |  |  | 180 → 62 |  |
| 65 | 甘特图修订 |  | 2018-10-28 19:52 A → 2018-10-28 14:52 A | 0.86d → 0.73d |  |  | 180 → 55, 180 |  |
| 68 | 需求工程项目计划修订 |  | 2018-10-28 15:00 A → 2018-10-28 12:00 A |  |  |  |  |  |
| 69 | 可行性分析修订 |  |  |  |  |  | 180 → 47, 180 |  |
| 70 | 可行性分析修订 |  |  |  |  |  | 180 → 69 |  |
| 71 | 需求工程项目计划修订 |  | 2018-10-28 19:00 A → 2018-10-28 20:00 A | 0.12d → 0.25d |  |  | 181 → 68 |  |
| 73 | 需求工程项目计划答辩ppt修订 |  |  |  |  |  | 181 → 49, 181 | was named 需求工程答辩ppt修改 |
| 74 | 可行性分析修订 |  |  |  |  |  | 181 → 70, 181 |  |
| 75 | 需求工程项目计划修订 |  |  |  |  |  | 188 → 71, 182 |  |
| 78 | 甘特图修订 |  |  |  |  |  | 188 → 72, 182 |  |
| 81 | 软件开发计划修订 |  | 2018-10-30 18:00 A → 2018-10-30 15:20 A | 1d → 0.67d |  |  | 188 → 56, 182 |  |
| 106 | **需求分析** | 2018-11-01 09:00 → 2018-11-18 12:00 A (+17d) | 2018-11-06 09:00 → 2018-12-02 21:00 A (+26d) | 4.12d → 6.25d? | 0% → 100% | 0d → none |  |  |
| 126 | **需求规格说明** | 2018-11-06 10:00 → 2018-12-03 19:00 A (+27d) | 2018-11-13 18:00 → 2018-12-24 20:00 A (+41d) | 7d → 8d? | 0% → 100% |  |  |  |
| 129 | 用例图 | 2018-11-03 12:00 → 2018-12-06 19:00 A (+33d) | 2018-11-03 21:00 → 2018-12-06 20:00 A (+33d) | 1d → 0.12d? | 0% → 100% |  | 分析可行性, 确定需求优先级, 编写数据字典 → 128, 202 | constraint none → start no earlier than 2018-12-06 09:00; resources 赵豪杰 → 罗培铖 |
| 165 | 验证 | 2018-11-16 09:00 → 2018-10-21 19:00 (-26d) | 2018-11-21 18:00 → 2018-10-27 13:00 (-25d) | 5.12d → 1d |  | none → 29.75d | 采用软件需求规格说明模板 → none |  |
| 168 | **项目控制** | 2018-09-19 09:00 → 2018-09-20 08:00 A (+1d) | 2019-01-09 18:00 → 2018-12-26 19:06 A (-14d) | 99d → 33.89d? | 8% → 100% |  |  |  |
| 170 | 第一次与杨枨老师进行访谈 |  |  |  |  |  |  | was named 与杨枨老师确认项目大致内容 |
| 171 | 第一次小组会议 |  |  |  |  |  | 38 → 170 |  |
| 172 | 第二次小组会议 |  |  |  |  |  | 组长检查 → 40 |  |
| 174 | 第二次与杨枨老师进行访谈 |  |  |  |  |  | 44 → 173 | was named 与杨枨老师进行非正式访谈 |
| 177 | 第三次与杨枨老师进行访谈 |  |  |  |  |  | 175 → 176 | was named 与杨枨老师进行客户访谈 |
| 180 | 第五次小组会议 |  |  |  |  |  | 60 → 179 |  |
| 181 | 第一次组内评审 |  |  |  |  |  | 61, 65, 64, 63, 70, 68 → 71, 70, 65, 66, 63, 60 |  |
| 188 | 第一次评审 | 2018-10-28 18:00 → 2018-11-07 08:00 A (+10d) | 2018-10-28 18:12 → 2018-11-07 20:00 A (+10d) | 0.03d → 0.33d | 0% → 100% |  | 181 → 95, 94, 93, 92, 87, 86, 85 |  |
| 192 | 第五次与杨枨老师进行访谈 | 2018-11-14 08:00 → 2018-11-15 08:40 A (+1d) | 2018-11-14 17:00 → 2018-11-15 17:00 A (+1d) | 1d → 0.92d | 0% → 100% |  | 整理成需求规格说明书 → 191 | was named 与杨枨老师进行交流; constraint none → finish no earlier than 2018-11-15 18:00 |
| 193 | 第八次小组会议 | 2018-11-08 16:24 → 2018-11-16 08:00 A (+8d) | 2018-11-09 16:24 → 2018-11-16 17:00 A (+7d) | 1d? → 0.26d | 0% → 100% |  | 钓鱼用户访谈 → 192 | was named 小组会议; constraint none → finish no earlier than 2018-11-16 18:00; resources 罗培铖; 苏碧青; 张嘉诚; 赵豪杰; 郑丞钧 → 苏碧青; 张嘉诚; 赵豪杰; 郑丞钧 |
| 200 | 第十次小组会议 | 2018-11-15 08:00 → 2018-11-27 19:00 A (+12d) | 2018-11-15 17:00 → 2018-11-27 19:24 A (+12d) | 1d → 0.05d | 0% → 100% |  | 192 → 199 | was named 小组会议; constraint none → start no earlier than 2018-11-27 09:00 |
| 202 | 第十一次小组会议 | 2018-11-21 08:00 → 2018-11-29 09:00 A (+8d) | 2018-11-21 17:00 → 2018-11-29 19:55 A (+8d) | 1d? → 0.1d? | 0% → 100% |  | 原型修改 → 120, 122, 121 | was named 小组会议 |
| 212 | **项目收尾** | 2019-01-06 09:00 → 2019-01-13 16:00 (+7d) | 2019-01-09 18:00 → 2019-01-16 18:00 (+7d) | 3.62d → 3d |  |  | 编码/测试计划 → 57 |  |
| 213 | 项目总结 | 2019-01-06 18:00 → 2019-01-13 13:00 (+7d) | 2019-01-08 14:00 → 2019-01-16 18:00 (+8d) |  |  | none → 0d | 编码/测试计划 → 57 | constraint none → finish no earlier than 2019-01-16 18:00 |
| 214 | 制作PPT | 2019-01-08 14:00 → 2019-01-13 14:00 (+5d) | 2019-01-09 14:00 → 2019-01-16 18:00 (+7d) |  |  | none → 0d | 213 → none | constraint none → finish no earlier than 2019-01-16 18:00 |
| 215 | 答辩 | 2019-01-09 14:00 → 2019-01-13 19:00 (+4d) | 2019-01-09 18:00 → 2019-01-16 18:00 (+7d) |  |  | none → 0d | 214 → none | constraint none → finish no earlier than 2019-01-16 18:00 |
